# EU-OSHA_NCW_PL_Prototype%20and%201st%20release_20140908_01

Schedule from MS Project, 2014-07-01 to 2020-09-01.
PricewaterhouseCoopers

## Calendars

- Estándar: Mon-Fri 09:00-13:00, 15:00-19:00; Sat-Sun off. Exceptions (off unless hours are given): 2016-07-25 (SANTIAGO), 2016-08-15 (AGOSTO), 2016-10-07 (80º Aniversario 1er Gobierno Vasco), 2016-10-12 (PILAR), 2016-11-01 (TODOS LOS SANTOS), 2016-12-06 (CONSTITUCION), 2016-12-08 (INMACULADA CONCEPCION), 2016-12-24 to 2017-01-01 (NAVIDAD), 2017-01-06 (REYES), 2017-04-13 to 2017-04-17 (SEMANA SANTA), 2017-05-01 (1 de MAYO), 2017-08-15 (ASUNCIÓN DE LA VIRGEN), 2017-10-12 (FIESTA NACIONAL DE ESPAÑA), 2017-11-01 (FIESTA DE TODOS LOS SANTOS), 2017-12-06 (INMACULADA), 2017-12-08 (CONCEPCIÓN), 2017-12-24 to 2017-12-25 (NAVIDAD), 2017-12-31 to 2018-01-01 (AÑO NUEVO), 2018-01-06 (REYES), 2018-03-29 to 2018-04-02 (SEMANA SANTA), 2018-08-01 to 2018-08-31 (HOLIDAYS), 2018-12-25 (NAVIDAD), 2019-01-01 (AÑO NUEVO), 2019-01-06 (REYES), 2019-03-19 (SAN JOSE), 2019-04-18 to 2019-04-22 (SEMANA SANTA 2019), 2019-05-01 (DIA DEL TRABAJO), 2019-07-25 (SANTIAGO), 2019-07-31 (SAN IGNACIO), 2019-08-15 (ASUNCION DE LA VIRGEN), 2019-08-23 (FIESTA DE BILBAO), 2019-10-12 (PILAR), 2019-11-01 (FIESTA DE TODOS LOS SANTOS), 2019-12-06 (CONSTITUCIÓN), 2019-12-25 (NAVIDAD), 2020-01-01 (AÑO NUEVO), 2020-01-06 (REYES).

## Resources

| Resource |
| --- |
| LB |
| BM |
| ROS |
| EU-OSHA |
| EU-OSHA + LB? |
| PwC |
| MAINSTRAT |
| s |
| SYSLAB |
| Codesyntax |
| CdT |
| Prepress |
| FIOH |
| ILO |
| Pomilio Blumm |
| UX |
| KEC |

## Schedule

| ID | WBS | Task | Duration | Start | Finish | Predecessors | Total slack | Free slack | Constraint | Resources | Work |
| --- | --- | --- | --- | --- | --- | --- | --- | --- | --- | --- | --- |
| 1 | 1 | **HWC 20-22: Muskoloeskeletal Disorders Graphical designs project** | 1229d | 2014-07-01 | 2019-06-04 |  | 316d |  |  |  | 6880h |
| 2 | 1.1 | Green Light | 1d | 2018-12-19 | 2018-12-19 |  | 428d |  | start no earlier than 2018-12-19 | EU-OSHA; Pomilio Blumm; PwC | 24h |
| 3 | 1.2 | Kick-off meeting | 1d | 2019-01-09 | 2019-01-09 |  | 316d | 0d | start no earlier than 2019-01-09 | EU-OSHA; Pomilio Blumm; PwC | 24h |
| 4 | 1.3 | **Graphical features** | 1229d | 2014-07-01 | 2019-06-04 |  | 316d |  |  |  | 6832h |
| 5 | 1.3.1 | **Graphical designs** | 99d | 2019-01-10 | 2019-06-04 |  | 316d |  |  |  | 5208h |
| 6 | 1.3.1.1 | **Desktop resolution** | 56d | 2019-01-10 | 2019-03-29 |  | 316d |  |  |  | 1552h |
| 7 | 1.3.1.1.1 | **1st Package (3 proposals per screen)** | 32d | 2019-01-10 | 2019-02-22 |  | 316d |  |  |  | 704h |
| 8 | 1.3.1.1.1.1 | Delivery Splash Page Graphical designs | 17d | 2019-01-10 | 2019-02-01 | 3 | 316d | 0d |  | Pomilio Blumm | 136h |
| 9 | 1.3.1.1.1.2 | Delivery Home Page Graphical designs | 17d | 2019-01-10 | 2019-02-01 | 3 | 316d | 0d |  | Pomilio Blumm | 136h |
| 10 | 1.3.1.1.1.3 | Delivery Article Splash Page Graphical designs | 17d | 2019-01-10 | 2019-02-01 | 3 | 316d | 0d |  | Pomilio Blumm | 136h |
| 11 | 1.3.1.1.1.4 | Delivery Previous Campaign Graphical designs | 17d | 2019-01-10 | 2019-02-01 | 3 | 316d | 0d |  | Pomilio Blumm | 136h |
| 12 | 1.3.1.1.1.5 | Revision and feeback of the Graphical designs | 5d | 2019-02-04 | 2019-02-08 | 8, 9, 10, 11 | 316d | 0d |  | EU-OSHA; PwC | 80h |
| 13 | 1.3.1.1.1.6 | Update according to the feedback | 5d | 2019-02-11 | 2019-02-15 | 12 | 316d | 0d |  | Pomilio Blumm | 40h |
| 14 | 1.3.1.1.1.7 | Validation of most relevant graphical design | 5d | 2019-02-18 | 2019-02-22 | 13 | 316d | 0d |  | EU-OSHA | 40h |
| 15 | 1.3.1.1.2 | **2nd Package (1 proposal by screen)** | 12d | 2019-02-25 | 2019-03-12 |  | 371d |  |  |  | 224h |
| 16 | 1.3.1.1.2.1 | Delivery Introductory Page Graphical design -OK | 3d | 2019-02-25 | 2019-02-27 | 14 | 371d | 0d |  | Pomilio Blumm | 24h |
| 17 | 1.3.1.1.2.2 | Delivery Priority Areas Graphical design | 3d | 2019-02-25 | 2019-02-27 | 14 | 371d | 0d |  | Pomilio Blumm | 24h |
| 18 | 1.3.1.1.2.3 | Delivery Glossary Graphical design | 3d | 2019-02-25 | 2019-02-27 | 14 | 371d | 0d |  | Pomilio Blumm | 24h |
| 19 | 1.3.1.1.2.4 | Delivery Publication List Graphical design | 3d | 2019-02-25 | 2019-02-27 | 14 | 371d | 0d |  | Pomilio Blumm | 24h |
| 20 | 1.3.1.1.2.5 | Delivery Publication Detail Graphical design | 3d | 2019-02-25 | 2019-02-27 | 14 | 371d | 0d |  | Pomilio Blumm | 24h |
| 21 | 1.3.1.1.2.6 | Revision and feeback of the Graphical designs | 4d | 2019-02-28 | 2019-03-05 | 16, 17, 18, 19, 20 | 371d | 0d |  | EU-OSHA; PwC | 64h |
| 22 | 1.3.1.1.2.7 | Update according to the feedback | 3d | 2019-03-06 | 2019-03-08 | 21 | 371d | 0d |  | Pomilio Blumm | 24h |
| 23 | 1.3.1.1.2.8 | Validation | 2d | 2019-03-11 | 2019-03-12 | 22 | 371d |  |  | EU-OSHA | 16h |
| 24 | 1.3.1.1.3 | **3rd Package (1 proposal by screen)** | 12d | 2019-02-28 | 2019-03-15 |  | 368d |  |  |  | 224h |
| 25 | 1.3.1.1.3.1 | Delivery Practical Tool List Graphical design | 3d | 2019-02-28 | 2019-03-04 | 14FS+3d | 368d | 0d |  | Pomilio Blumm | 24h |
| 26 | 1.3.1.1.3.2 | Delivery Practical Tool detail Graphical design | 3d | 2019-02-28 | 2019-03-04 | 14FS+3d | 368d | 0d |  | Pomilio Blumm | 24h |
| 27 | 1.3.1.1.3.3 | Delivery Good Practice Awards design | 3d | 2019-02-28 | 2019-03-04 | 14FS+3d | 368d | 0d |  | Pomilio Blumm | 24h |
| 28 | 1.3.1.1.3.4 | Delivery Get your certificate page Graphical design | 3d | 2019-02-28 | 2019-03-04 | 14FS+3d | 368d | 0d |  | Pomilio Blumm | 24h |
| 29 | 1.3.1.1.3.5 | Delivery Get your certificate PDF Graphical design | 3d | 2019-02-28 | 2019-03-04 | 14FS+3d | 368d | 0d |  | Pomilio Blumm | 24h |
| 30 | 1.3.1.1.3.6 | Revision and feeback of the Graphical designs | 4d | 2019-03-05 | 2019-03-08 | 25, 26, 27, 28, 29 | 368d | 0d |  | EU-OSHA; PwC | 64h |
| 31 | 1.3.1.1.3.7 | Update according to the feedback | 3d | 2019-03-11 | 2019-03-13 | 30 | 368d | 0d |  | Pomilio Blumm | 24h |
| 32 | 1.3.1.1.3.8 | Validation | 2d | 2019-03-14 | 2019-03-15 | 31 | 368d |  |  | EU-OSHA | 16h |

| ID | WBS | Task | Duration | Start | Finish | Predecessors | Total slack | Free slack | Resources | Work |
| --- | --- | --- | --- | --- | --- | --- | --- | --- | --- | --- |
| 33 | 1.3.1.1.4 | **4th Package (1 proposal by screen)** | 12d | 2019-03-05 | 2019-03-21 |  | 365d |  |  | 224h |
| 34 | 1.3.1.1.4.1 | Delivery European Week Graphical design | 3d | 2019-03-05 | 2019-03-07 | 14FS+6d | 365d | 0d | Pomilio Blumm | 24h |
| 35 | 1.3.1.1.4.2 | Delivery Become a Campaign Partner Graphical design | 3d | 2019-03-05 | 2019-03-07 | 14FS+6d | 365d | 0d | Pomilio Blumm | 24h |
| 36 | 1.3.1.1.4.3 | Delivery Event List design | 3d | 2019-03-05 | 2019-03-07 | 14FS+6d | 365d | 0d | Pomilio Blumm | 24h |
| 37 | 1.3.1.1.4.4 | Delivery Event Detail (Complete event) Graphical design | 3d | 2019-03-05 | 2019-03-07 | 14FS+6d | 365d | 0d | Pomilio Blumm | 24h |
| 38 | 1.3.1.1.4.5 | Delivery OCP Detail Graphical design | 3d | 2019-03-05 | 2019-03-07 | 14FS+6d | 365d | 0d | Pomilio Blumm | 24h |
| 39 | 1.3.1.1.4.6 | Revision and feeback of the Graphical designs | 4d | 2019-03-08 | 2019-03-13 | 34, 35, 36, 37, 38 | 365d | 0d | EU-OSHA; PwC | 64h |
| 40 | 1.3.1.1.4.7 | Update according to the feedback | 3d | 2019-03-14 | 2019-03-18 | 39 | 365d | 0d | Pomilio Blumm | 24h |
| 41 | 1.3.1.1.4.8 | Validation | 2d | 2019-03-20 | 2019-03-21 | 40 | 365d |  | EU-OSHA | 16h |
| 42 | 1.3.1.1.5 | **5th Package (1 proposal by screen)** | 14d | 2019-03-11 | 2019-03-29 |  | 316d | 0d |  | 176h |
| 43 | 1.3.1.1.5.1 | Delivery Newsletter page Graphical design | 2d | 2019-03-11 | 2019-03-12 | 14FS+10d | 316d | 0d | Pomilio Blumm | 16h |
| 44 | 1.3.1.1.5.2 | Delivery Home Page of the private zone Graphical design | 2d | 2019-03-11 | 2019-03-12 | 14FS+10d | 316d | 0d | Pomilio Blumm | 16h |
| 45 | 1.3.1.1.5.3 | Delivery Campaign resources design | 2d | 2019-03-11 | 2019-03-12 | 14FS+10d | 316d | 0d | Pomilio Blumm | 16h |
| 46 | 1.3.1.1.5.4 | Delivery TBC Graphical design | 2d | 2019-03-11 | 2019-03-12 | 14FS+10d | 316d | 0d | Pomilio Blumm | 16h |
| 47 | 1.3.1.1.5.5 | Revision and feeback of the Graphical designs | 2d | 2019-03-13 | 2019-03-14 | 43, 44, 45, 46 | 316d | 0d | EU-OSHA; PwC | 32h |
| 48 | 1.3.1.1.5.6 | Update according to the feedback | 1d | 2019-03-15 | 2019-03-15 | 47 | 316d | 0d | Pomilio Blumm | 8h |
| 49 | 1.3.1.1.5.7 | Validation and feedback by HoU and Director | 7d | 2019-03-18 | 2019-03-27 | 48 | 316d | 0d | EU-OSHA | 56h |
| 50 | 1.3.1.1.5.8 | Final Delivery after the feedback | 2d | 2019-03-28 | 2019-03-29 | 49 | 316d |  | Pomilio Blumm | 16h |
| 51 | 1.3.1.2 | **Tablet & Mobile resolution** | 43d | 2019-04-01 | 2019-06-04 |  | 316d |  |  | 3656h |
| 52 | 1.3.1.2.1 | Splash Page | 18d | 2019-04-01 | 2019-04-29 | 42 | 316d | 0d | Pomilio Blumm | 144h |
| 53 | 1.3.1.2.2 | Home Page | 18d | 2019-04-01 | 2019-04-29 | 42 | 316d | 0d | Pomilio Blumm | 144h |
| 54 | 1.3.1.2.3 | Article | 18d | 2019-04-01 | 2019-04-29 | 42 | 316d | 0d | Pomilio Blumm | 144h |
| 55 | 1.3.1.2.4 | Previous Campaign | 18d | 2019-04-01 | 2019-04-29 | 42 | 316d | 0d | Pomilio Blumm | 144h |
| 56 | 1.3.1.2.5 | Publication Detail | 18d | 2019-04-01 | 2019-04-29 | 42 | 316d | 0d | Pomilio Blumm | 144h |
| 57 | 1.3.1.2.6 | Practical Tool list | 18d | 2019-04-01 | 2019-04-29 | 42 | 316d | 0d | Pomilio Blumm | 144h |
| 58 | 1.3.1.2.7 | Practical Tools detail | 18d | 2019-04-01 | 2019-04-29 | 42 | 316d | 0d | Pomilio Blumm | 144h |
| 59 | 1.3.1.2.8 | Good Practice Awards | 18d | 2019-04-01 | 2019-04-29 | 42 | 316d | 0d | Pomilio Blumm | 144h |
| 60 | 1.3.1.2.9 | Get your certificate Page | 18d | 2019-04-01 | 2019-04-29 | 42 | 316d | 0d | Pomilio Blumm | 144h |
| 61 | 1.3.1.2.10 | Get your certificate pdf | 18d | 2019-04-01 | 2019-04-29 | 42 | 316d | 0d | Pomilio Blumm | 144h |
| 62 | 1.3.1.2.11 | European Week | 18d | 2019-04-01 | 2019-04-29 | 42 | 316d | 0d | Pomilio Blumm | 144h |
| 63 | 1.3.1.2.12 | Become a campaign partner | 18d | 2019-04-01 | 2019-04-29 | 42 | 316d | 0d | Pomilio Blumm | 144h |
| 64 | 1.3.1.2.13 | Event list | 18d | 2019-04-01 | 2019-04-29 | 42 | 316d | 0d | Pomilio Blumm | 144h |
| 65 | 1.3.1.2.14 | Evenvent detail (complete) | 18d | 2019-04-01 | 2019-04-29 | 42 | 316d | 0d | Pomilio Blumm | 144h |
| 66 | 1.3.1.2.15 | OCP detail | 18d | 2019-04-01 | 2019-04-29 | 42 | 316d | 0d | Pomilio Blumm | 144h |
| 67 | 1.3.1.2.16 | Newsletter page | 18d | 2019-04-01 | 2019-04-29 | 42 | 316d | 0d | Pomilio Blumm | 144h |
| 68 | 1.3.1.2.17 | Home Page of the previous provate zone | 18d | 2019-04-01 | 2019-04-29 | 42 | 316d | 0d | Pomilio Blumm | 144h |
| 69 | 1.3.1.2.18 | Introductory Page | 18d | 2019-04-01 | 2019-04-29 | 42 | 316d | 0d | Pomilio Blumm | 144h |
| 70 | 1.3.1.2.19 | Priority Areas | 18d | 2019-04-01 | 2019-04-29 | 42 | 316d | 0d | Pomilio Blumm | 144h |
| 71 | 1.3.1.2.20 | Glossary | 18d | 2019-04-01 | 2019-04-29 | 42 | 316d | 0d | Pomilio Blumm | 144h |
| 72 | 1.3.1.2.21 | Publication List | 18d | 2019-04-01 | 2019-04-29 | 42 | 316d | 0d | Pomilio Blumm | 144h |
| 73 | 1.3.1.2.22 | Campaign resources | 18d | 2019-04-01 | 2019-04-29 | 42 | 316d | 0d | Pomilio Blumm | 144h |
| 74 | 1.3.1.2.23 | TCB | 18d | 2019-04-01 | 2019-04-29 | 42 | 316d | 0d | Pomilio Blumm | 144h |
| 75 | 1.3.1.2.24 | Revision and feedback | 18d | 2019-04-30 | 2019-05-24 | 52, 53, 54, 55, 56, 57, 58, 59, 60, 61, 62, 63, 64, 65, 66, 67, 68, 69, 70, 71, 72, 73, 74 | 316d | 0d | EU-OSHA; PwC | 288h |
| 76 | 1.3.1.2.25 | Update according to the feedback | 4d | 2019-05-27 | 2019-05-30 | 75 | 316d | 0d | Pomilio Blumm | 32h |
| 77 | 1.3.1.2.26 | Final Validation | 3d | 2019-05-31 | 2019-06-04 | 76 | 316d |  | EU-OSHA | 24h |

| ID | WBS | Task | Duration | Start | Finish | Predecessors | Total slack | Free slack | Resources | Work |
| --- | --- | --- | --- | --- | --- | --- | --- | --- | --- | --- |
| 78 | 1.3.2 | **Illustrations and Pictures** | 36d | 2014-07-01 | 2014-08-19 |  | 1509d |  |  | 752h |
| 79 | 1.3.2.1 | **1st Package** | 12d | 2014-07-01 | 2014-07-16 |  | 1509d | 0d |  | 528h |
| 80 | 1.3.2.1.1 | Home Page | 12d | 2014-07-01 | 2014-07-16 |  | 1509d |  | Pomilio Blumm | 96h |
| 81 | 1.3.2.1.2 | Splash Page | 12d | 2014-07-01 | 2014-07-16 |  | 1509d |  | Pomilio Blumm | 96h |
| 82 | 1.3.2.1.3 | 7 Priority Areas | 12d | 2014-07-01 | 2014-07-16 |  | 1509d |  | Pomilio Blumm | 96h |
| 83 | 1.3.2.1.4 | 2TBC | 12d | 2014-07-01 | 2014-07-16 |  | 1509d |  | Pomilio Blumm | 96h |
| 84 | 1.3.2.1.5 | Revision and Feedback | 4d | 2014-07-01 | 2014-07-04 |  | 1517d |  | PwC; EU-OSHA | 64h |
| 85 | 1.3.2.1.6 | Update according to the feedback | 5d | 2014-07-01 | 2014-07-07 |  | 1516d |  | Pomilio Blumm | 40h |
| 86 | 1.3.2.1.7 | Validation | 5d | 2014-07-01 | 2014-07-07 |  | 1516d |  | EU-OSHA | 40h |
| 87 | 1.3.2.2 | **2nd Package** | 24d | 2014-07-17 | 2014-08-19 |  | 1509d |  |  | 224h |
| 88 | 1.3.2.2.1 | Delivery | 10d | 2014-07-17 | 2014-07-30 | 79 | 1509d | 0d | Pomilio Blumm | 80h |
| 89 | 1.3.2.2.2 | Revision and Feedback | 4d | 2014-07-31 | 2014-08-05 | 88 | 1509d | 0d | EU-OSHA; PwC | 64h |
| 90 | 1.3.2.2.3 | Update according to the feedback | 5d | 2014-08-06 | 2014-08-12 | 89 | 1509d | 0d | Pomilio Blumm | 40h |
| 91 | 1.3.2.2.4 | Validation | 5d | 2014-08-13 | 2014-08-19 | 90 | 1509d |  | EU-OSHA | 40h |
| 92 | 1.3.3 | **Email Templates** | 26d | 2019-02-25 | 2019-04-02 |  | 357d |  |  | 336h |
| 93 | 1.3.3.1 | Recruitment Process | 12d | 2019-02-25 | 2019-03-12 | 14 | 357d | 0d | Pomilio Blumm | 96h |
| 94 | 1.3.3.2 | Newsletter email | 12d | 2019-02-25 | 2019-03-12 | 14 | 357d | 0d | Pomilio Blumm | 96h |
| 95 | 1.3.3.3 | Revision and Feedback | 4d | 2019-03-13 | 2019-03-18 | 93, 94 | 357d | 0d | PwC; EU-OSHA | 64h |
| 96 | 1.3.3.4 | Update according to the feedback | 5d | 2019-03-20 | 2019-03-26 | 95 | 357d | 0d | Pomilio Blumm | 40h |
| 97 | 1.3.3.5 | Validation | 5d | 2019-03-27 | 2019-04-02 | 96 | 357d |  | EU-OSHA | 40h |
| 98 | 1.3.4 | **Icons and Flags** | 27d | 2014-07-01 | 2014-08-06 |  | 1518d |  |  | 536h |
| 99 | 1.3.4.1 | **1st Package** | 10d | 2014-07-01 | 2014-07-14 |  | 1518d | 0d |  | 360h |
| 100 | 1.3.4.1.1 | Delivery | 10d | 2014-07-01 | 2014-07-14 |  | 1518d |  | Pomilio Blumm | 80h |
| 101 | 1.3.4.1.2 | Revision and Feedback | 10d | 2014-07-01 | 2014-07-14 |  | 1518d |  | PwC; EU-OSHA | 160h |
| 102 | 1.3.4.1.3 | Update according to the feedback | 10d | 2014-07-01 | 2014-07-14 |  | 1518d |  | Pomilio Blumm | 80h |
| 103 | 1.3.4.1.4 | Validation | 5d | 2014-07-01 | 2014-07-07 |  | 1523d |  | EU-OSHA | 40h |

| ID | WBS | Task | Duration | Start | Finish | Predecessors | Total slack | Free slack | Constraint | Resources | Work |
| --- | --- | --- | --- | --- | --- | --- | --- | --- | --- | --- | --- |
| 104 | 1.3.4.2 | **2nd Package** | 17d | 2014-07-15 | 2014-08-06 |  | 1518d |  |  |  | 176h |
| 105 | 1.3.4.2.1 | Delivery | 5d | 2014-07-15 | 2014-07-21 | 99 | 1518d | 0d |  | Pomilio Blumm | 40h |
| 106 | 1.3.4.2.2 | Revision and Feedback | 5d | 2014-07-22 | 2014-07-28 | 105 | 1518d | 0d |  | EU-OSHA; PwC | 80h |
| 107 | 1.3.4.2.3 | Update according to the feedback | 5d | 2014-07-29 | 2014-08-04 | 106 | 1518d | 0d |  | Pomilio Blumm | 40h |
| 108 | 1.3.4.2.4 | Validation | 2d | 2014-08-05 | 2014-08-06 | 107 | 1518d |  |  | EU-OSHA | 16h |
| 109 | 2 | **HWC 20-22: Muskoloeskeletal Disorders website** | 1545d | 2014-07-01 | 2020-09-01 |  | 0d |  |  |  | 108424h |
| 110 | 2.1 | Green Light | 1d | 2019-04-05 | 2019-04-05 |  | 93d | 0d | start no earlier than 2019-04-05 |  |  |
| 111 | 2.2 | Kick-off meeting | 1d | 2019-04-08 | 2019-04-08 | 110 | 353d |  |  |  |  |
| 112 | 2.3 | **Content Management** | 375d | 2019-03-04 | 2020-08-27 |  | 3d |  |  |  | 52832h |
| 113 | 2.3.1 | **Splash Page** | 228d | 2019-03-04 | 2020-02-04 |  | 36d |  |  |  | 37512h |
| 114 | 2.3.1.1 | **Content production** | 191d | 2019-03-04 | 2019-12-10 |  | 36d |  |  |  | 37216h |
| 115 | 2.3.1.1.1 | **Existing content** | 155d | 2019-03-04 | 2019-10-17 |  | 186d | 36d |  | EU-OSHA | 22240h |
| 116 | 2.3.1.1.1.1 | **Internal revision of the content** | 130d | 2019-03-04 | 2019-09-12 |  | 186d | 0d |  | EU-OSHA | 20800h |
| 117 | 2.3.1.1.1.1.1 | Tools & Publication - Introductory webpage | 130d | 2019-03-04 | 2019-09-12 |  | 186d |  | start no earlier than 2019-03-04 | EU-OSHA | 1040h |
| 118 | 2.3.1.1.1.1.2 | Publications | 130d | 2019-03-04 | 2019-09-12 |  | 186d |  | start no earlier than 2019-03-04 | EU-OSHA | 1040h |
| 119 | 2.3.1.1.1.1.3 | Campaign Materials | 130d | 2019-03-04 | 2019-09-12 |  | 186d |  | start no earlier than 2019-03-04 | EU-OSHA | 1040h |
| 120 | 2.3.1.1.1.1.4 | Campaign Toolkit | 130d | 2019-03-04 | 2019-09-12 |  | 186d |  | start no earlier than 2019-03-04 | EU-OSHA | 1040h |
| 121 | 2.3.1.1.1.1.5 | Napo Films | 130d | 2019-03-04 | 2019-09-12 |  | 186d |  | start no earlier than 2019-03-04 | EU-OSHA | 1040h |
| 122 | 2.3.1.1.1.1.6 | OSH wiki | 130d | 2019-03-04 | 2019-09-12 |  | 186d |  | start no earlier than 2019-03-04 | EU-OSHA | 1040h |
| 123 | 2.3.1.1.1.1.7 | Get involved - Introductory Page | 130d | 2019-03-04 | 2019-09-12 |  | 186d |  | start no earlier than 2019-03-04 | EU-OSHA | 1040h |
| 124 | 2.3.1.1.1.1.8 | European week | 130d | 2019-03-04 | 2019-09-12 |  | 186d |  | start no earlier than 2019-03-04 | EU-OSHA | 1040h |
| 125 | 2.3.1.1.1.1.9 | Become a Campaign Partner | 130d | 2019-03-04 | 2019-09-12 |  | 186d |  | start no earlier than 2019-03-04 | EU-OSHA | 1040h |
| 126 | 2.3.1.1.1.1.10 | Start your Campaign | 130d | 2019-03-04 | 2019-09-12 |  | 186d |  | start no earlier than 2019-03-04 | EU-OSHA | 1040h |
| 127 | 2.3.1.1.1.1.11 | Campaign Materials | 130d | 2019-03-04 | 2019-09-12 |  | 186d |  | start no earlier than 2019-03-04 | EU-OSHA | 1040h |
| 128 | 2.3.1.1.1.1.12 | Events | 130d | 2019-03-04 | 2019-09-12 |  | 186d |  | start no earlier than 2019-03-04 | EU-OSHA | 1040h |
| 129 | 2.3.1.1.1.1.13 | National Focal Points | 130d | 2019-03-04 | 2019-09-12 |  | 186d |  | start no earlier than 2019-03-04 | EU-OSHA | 1040h |
| 130 | 2.3.1.1.1.1.14 | Official campign partners | 130d | 2019-03-04 | 2019-09-12 |  | 186d |  | start no earlier than 2019-03-04 | EU-OSHA | 1040h |
| 131 | 2.3.1.1.1.1.15 | Media Partners | 130d | 2019-03-04 | 2019-09-12 |  | 186d |  | start no earlier than 2019-03-04 | EU-OSHA | 1040h |
| 132 | 2.3.1.1.1.1.16 | Enterprise European Network | 130d | 2019-03-04 | 2019-09-12 |  | 186d |  | start no earlier than 2019-03-04 | EU-OSHA | 1040h |
| 133 | 2.3.1.1.1.1.17 | Press Room | 130d | 2019-03-04 | 2019-09-12 |  | 186d |  | start no earlier than 2019-03-04 | EU-OSHA | 1040h |
| 134 | 2.3.1.1.1.1.18 | News | 130d | 2019-03-04 | 2019-09-12 |  | 186d |  | start no earlier than 2019-03-04 | EU-OSHA | 1040h |
| 135 | 2.3.1.1.1.1.19 | Become a Media Partner | 130d | 2019-03-04 | 2019-09-12 |  | 186d |  | start no earlier than 2019-03-04 | EU-OSHA | 1040h |
| 136 | 2.3.1.1.1.2 | Validation in paper by the Director | 10d | 2019-09-13 | 2019-09-26 | 116 | 186d | 0d |  | EU-OSHA | 80h |
| 137 | 2.3.1.1.1.3 | Edition of content in the CMS | 15d | 2019-09-27 | 2019-10-17 | 136 | 186d |  |  | EU-OSHA | 120h |

| ID | WBS | Task | Type | Duration | Start | Finish | Predecessors | Total slack | Free slack | Constraint | Resources | Work |
| --- | --- | --- | --- | --- | --- | --- | --- | --- | --- | --- | --- | --- |
| 138 | 2.3.1.1.2 | **New content** |  | 155d | 2019-04-29 | 2019-12-10 |  | 0d |  |  | EU-OSHA | 14976h |
| 139 | 2.3.1.1.2.1 | **Creation of the content** |  | 130d | 2019-04-29 | 2019-11-04 |  | 150d | 0d |  | EU-OSHA | 13520h |
| 140 | 2.3.1.1.2.1.1 | About the Topic - Introductory Webpage |  | 130d | 2019-04-29 | 2019-11-04 |  | 150d |  | start no earlier than 2019-04-29 | EU-OSHA | 1040h |
| 141 | 2.3.1.1.2.1.2 | What is the issue |  | 130d | 2019-04-29 | 2019-11-04 |  | 150d |  | start no earlier than 2019-04-29 | EU-OSHA | 1040h |
| 142 | 2.3.1.1.2.1.3 | Why is so important |  | 130d | 2019-04-29 | 2019-11-04 |  | 150d |  | start no earlier than 2019-04-29 | EU-OSHA | 1040h |
| 143 | 2.3.1.1.2.1.4 | Who has to be involved |  | 130d | 2019-04-29 | 2019-11-04 |  | 150d |  | start no earlier than 2019-04-29 | EU-OSHA | 1040h |
| 144 | 2.3.1.1.2.1.5 | How can it be managed |  | 130d | 2019-04-29 | 2019-11-04 |  | 150d |  | start no earlier than 2019-04-29 | EU-OSHA | 1040h |
| 145 | 2.3.1.1.2.1.6 | The business case |  | 130d | 2019-04-29 | 2019-11-04 |  | 150d |  | start no earlier than 2019-04-29 | EU-OSHA | 1040h |
| 146 | 2.3.1.1.2.1.7 | About the Campaign |  | 130d | 2019-04-29 | 2019-11-04 |  | 150d |  | start no earlier than 2019-04-29 | EU-OSHA | 1040h |
| 147 | 2.3.1.1.2.1.8 | Campaign partners - Introductory Page |  | 130d | 2019-04-29 | 2019-11-04 |  | 150d |  | start no earlier than 2019-04-29 | EU-OSHA | 1040h |
| 148 | 2.3.1.1.2.1.9 | Media Centre - Introsuctory Page |  | 130d | 2019-04-29 | 2019-11-04 |  | 150d |  | start no earlier than 2019-04-29 | EU-OSHA | 1040h |
| 149 | 2.3.1.1.2.1.10 | Previous Campaign - Introductory Page |  | 130d | 2019-04-29 | 2019-11-04 |  | 150d |  | start no earlier than 2019-04-29 | EU-OSHA | 1040h |
| 150 | 2.3.1.1.2.1.11 | Previous Campaign - Dangerous Substances |  | 130d | 2019-04-29 | 2019-11-04 |  | 150d |  | start no earlier than 2019-04-29 | EU-OSHA | 1040h |
| 151 | 2.3.1.1.2.1.12 | Previous Campaign - All Ages |  | 130d | 2019-04-29 | 2019-11-04 |  | 150d |  | start no earlier than 2019-04-29 | EU-OSHA | 1040h |
| 152 | 2.3.1.1.2.2 | Internal revision of the content |  | 10d | 2019-11-05 | 2019-11-18 | 139 | 150d | 0d | finish no earlier than 2017-06-16 | EU-OSHA | 80h |
| 153 | 2.3.1.1.2.3 | Validation in paper by the Director |  | 10d | 2019-11-19 | 2019-12-02 | 152 | 150d | 0d | finish no earlier than 2017-06-16 | EU-OSHA | 80h |
| 154 | 2.3.1.1.2.4 | **Revision of the content by Prepress** |  | 1d | 2019-04-29 | 2019-04-29 |  |  |  |  | EU-OSHA; Prepress | 16h |
| 155 | 2.3.1.1.2.4.1 | Revision of the content by Prepress | milestone | 0d | 2019-11-05 | 2019-11-05 |  | 212d |  | start no earlier than 2019-11-05 | Prepress |  |
| 156 | 2.3.1.1.2.4.2 | Validation by the Managemnent | milestone | 0d | 2019-11-05 | 2019-11-05 |  | 212d |  | start no earlier than 2019-11-05 | EU-OSHA |  |
| 157 | 2.3.1.1.2.5 | Edition of content in the CMS |  | 5d | 2019-12-03 | 2019-12-10 | 153 | 150d |  |  | BM | 40h |
| 158 | 2.3.1.2 | **Translations (1st round)** |  | 37d | 2019-12-11 | 2020-02-04 |  | 150d |  |  |  | 296h |
| 159 | 2.3.1.2.1 | Final validation before sending to translation |  | 5d | 2019-12-11 | 2019-12-17 | 115, 138 | 150d | 0d |  | EU-OSHA | 40h |
| 160 | 2.3.1.2.2 | Preparation of the content and sending to the CdT |  | 2d | 2019-12-18 | 2019-12-19 | 159 | 150d | 0d |  | BM | 16h |
| 161 | 2.3.1.2.3 | Translate the content |  | 15d | 2019-12-20 | 2020-01-14 | 160 | 150d | 0d |  | CdT | 120h |
| 162 | 2.3.1.2.4 | Graphical Design adjustments in 25 languages |  | 15d | 2020-01-15 | 2020-02-04 | 161 | 150d |  |  | BM | 120h |

| ID | WBS | Task | Duration | Start | Finish | Predecessors | Total slack | Free slack | Constraint | Resources | Work |
| --- | --- | --- | --- | --- | --- | --- | --- | --- | --- | --- | --- |
| 163 | 2.3.2 | **HWC 20-22 website** | 375d | 2019-03-04 | 2020-08-27 |  | 3d |  |  |  | 15320h |
| 164 | 2.3.2.1 | **Content production** | 340d | 2019-03-04 | 2020-07-09 |  | 38d |  |  |  | 15040h |
| 165 | 2.3.2.1.1 | **Existing content** | 155d | 2019-03-04 | 2019-10-17 |  | 223d |  |  | EU-OSHA | 10800h |
| 166 | 2.3.2.1.1.1 | **Internal revision of the content** | 130d | 2019-03-04 | 2019-09-12 |  | 223d | 0d |  | EU-OSHA | 9360h |
| 167 | 2.3.2.1.1.1.1 | Practical Tools and Guidances | 130d | 2019-03-04 | 2019-09-12 |  | 223d |  | start no earlier than 2019-03-04 | EU-OSHA | 1040h |
| 168 | 2.3.2.1.1.1.2 | Good Practice Awards | 130d | 2019-03-04 | 2019-09-12 |  | 223d |  | start no earlier than 2019-03-04 | EU-OSHA | 1040h |
| 169 | 2.3.2.1.1.1.3 | Get your Certificate | 130d | 2019-03-04 | 2019-09-12 |  | 223d |  | start no earlier than 2019-03-04 | EU-OSHA | 1040h |
| 170 | 2.3.2.1.1.1.4 | Good Practice Exchange | 130d | 2019-03-04 | 2019-09-12 |  | 223d |  | start no earlier than 2019-03-04 | EU-OSHA | 1040h |
| 171 | 2.3.2.1.1.1.5 | Newsletter | 130d | 2019-03-04 | 2019-09-12 |  | 223d |  | start no earlier than 2019-03-04 | EU-OSHA | 1040h |
| 172 | 2.3.2.1.1.1.6 | Photo Gallery | 130d | 2019-03-04 | 2019-09-12 |  | 223d |  | start no earlier than 2019-03-04 | EU-OSHA | 1040h |
| 173 | 2.3.2.1.1.1.7 | Videos | 130d | 2019-03-04 | 2019-09-12 |  | 223d |  | start no earlier than 2019-03-04 | EU-OSHA | 1040h |
| 174 | 2.3.2.1.1.1.8 | Social Media | 130d | 2019-03-04 | 2019-09-12 |  | 223d |  | start no earlier than 2019-03-04 | EU-OSHA | 1040h |
| 175 | 2.3.2.1.1.2 | Validation in paper by the Director | 10d | 2019-09-13 | 2019-09-26 | 166 | 223d | 0d |  | EU-OSHA | 80h |
| 176 | 2.3.2.1.1.3 | Edition of content in the CMS | 15d | 2019-09-27 | 2019-10-17 | 175 | 223d |  |  | BM | 120h |
| 177 | 2.3.2.1.2 | **New content** | 120d | 2019-11-11 | 2020-04-30 |  | 3d | 0d |  | EU-OSHA | 3840h |
| 178 | 2.3.2.1.2.1 | Priority Areas | 120d | 2019-11-11 | 2020-04-30 |  | 3d |  | start no earlier than 2019-11-11 | EU-OSHA | 960h |
| 179 | 2.3.2.1.2.2 | Glossary | 120d | 2019-11-11 | 2020-04-30 |  | 3d |  | start no earlier than 2019-11-11 | EU-OSHA | 960h |
| 180 | 2.3.2.1.2.3 | Legislation | 120d | 2019-11-11 | 2020-04-30 |  | 3d |  | start no earlier than 2019-11-11 | EU-OSHA | 960h |
| 181 | 2.3.2.1.3 | Validation in paper by the Director | 10d | 2020-05-01 | 2020-05-14 | 177 | 3d | 0d | start no earlier than 2019-11-11 | EU-OSHA | 80h |
| 182 | 2.3.2.1.4 | Edition of content in the CMS | 10d | 2020-05-15 | 2020-05-28 | 181 | 3d | 0d |  | BM | 80h |
| 183 | 2.3.2.1.5 | Revision of the content by Prepress | 30d | 2020-05-29 | 2020-07-09 | 182 | 3d | 0d |  | Prepress | 240h |
| 184 | 2.3.2.2 | **Translations (2nd round)** | 35d | 2020-07-10 | 2020-08-27 |  | 3d |  |  |  | 280h |
| 185 | 2.3.2.2.1 | Final validation before sending to translation | 3d | 2020-07-10 | 2020-07-14 | 183 | 3d | 0d |  | EU-OSHA | 24h |
| 186 | 2.3.2.2.2 | Preparation of the content and sending to the CdT | 2d | 2020-07-15 | 2020-07-16 | 185 | 3d | 0d |  | BM | 16h |
| 187 | 2.3.2.2.3 | Translate the content | 15d | 2020-07-17 | 2020-08-06 | 186 | 3d | 0d |  | CdT | 120h |
| 188 | 2.3.2.2.4 | Graphical Design adjustments in 25 languages | 15d | 2020-08-07 | 2020-08-27 | 187 | 3d |  |  | BM | 120h |

| ID | WBS | Task | Duration | Start | Finish | Predecessors | Total slack | Free slack | Resources | Work |
| --- | --- | --- | --- | --- | --- | --- | --- | --- | --- | --- |
| 189 | 2.4 | **Development and testing in BM's environment** | 226d | 2019-04-08 | 2020-03-05 |  | 93d |  |  | 32776h |
| 190 | 2.4.1 | **Sprint 0** | 29d | 2019-04-08 | 2019-05-22 |  | 93d |  |  | 3344h |
| 191 | 2.4.1.1 | **Functional Analysis** | 29d | 2019-04-08 | 2019-05-22 |  | 93d |  | BM | 2184h |
| 192 | 2.4.1.1.1 | **New functional Analysis** | 29d | 2019-04-08 | 2019-05-22 |  | 93d | 0d | BM | 976h |
| 193 | 2.4.1.1.1.1 | Splash Page | 20d | 2019-04-08 | 2019-05-09 | 110 | 93d | 0d | BM | 160h |
| 194 | 2.4.1.1.1.2 | Introductory Page | 20d | 2019-04-08 | 2019-05-09 | 110 | 285d | 0d | BM | 160h |
| 195 | 2.4.1.1.1.3 | Articles | 20d | 2019-04-08 | 2019-05-09 | 110 | 285d | 0d | BM | 160h |
| 196 | 2.4.1.1.1.4 | Campaigns materials | 20d | 2019-04-08 | 2019-05-09 | 110 | 285d | 0d | BM | 160h |
| 197 | 2.4.1.1.1.5 | Revision and feedback | 4d | 2019-05-10 | 2019-05-15 | 193, 194, 195, 196 | 285d | 0d | EU-OSHA; PwC | 64h |
| 198 | 2.4.1.1.1.6 | Update according to the feedback | 3d | 2019-05-16 | 2019-05-20 | 197 | 285d | 0d | BM | 24h |
| 199 | 2.4.1.1.1.7 | Validation | 2d | 2019-05-21 | 2019-05-22 | 198 | 285d |  | EU-OSHA | 16h |
| 200 | 2.4.1.1.2 | **Updated functional Analysis** | 29d | 2019-04-08 | 2019-05-22 |  | 325d |  | BM | 976h |
| 201 | 2.4.1.1.2.1 | Publication (List + Detail) | 20d | 2019-04-08 | 2019-05-09 | 110 | 325d | 0d | BM | 160h |
| 202 | 2.4.1.1.2.2 | News (List + Detail) | 20d | 2019-04-08 | 2019-05-09 | 110 | 334d |  | BM | 160h |
| 203 | 2.4.1.1.2.3 | General Search | 20d | 2019-04-08 | 2019-05-09 | 110 | 334d |  | BM | 160h |
| 204 | 2.4.1.1.2.4 | Revision and feedback | 4d | 2019-05-10 | 2019-05-15 | 201 | 325d | 0d | EU-OSHA; PwC | 64h |
| 205 | 2.4.1.1.2.5 | Update according to the feedback | 3d | 2019-05-16 | 2019-05-20 | 204 | 325d | 0d | BM | 24h |
| 206 | 2.4.1.1.2.6 | Validation | 2d | 2019-05-21 | 2019-05-22 | 205 | 325d |  | EU-OSHA | 16h |
| 207 | 2.4.1.1.2.7 | Update integration document | 20d | 2019-04-08 | 2019-05-09 | 110 | 334d |  | BM | 160h |
| 208 | 2.4.1.2 | **Set up tools** | 20d | 2019-04-08 | 2019-05-09 |  | 334d |  | BM | 680h |
| 209 | 2.4.1.2.1 | BM's Development environment | 20d | 2019-04-08 | 2019-05-09 | 110 | 334d |  | BM | 160h |
| 210 | 2.4.1.2.2 | BM's Testing environment | 20d | 2019-04-08 | 2019-05-09 | 110 | 334d |  | BM | 160h |
| 211 | 2.4.1.2.3 | Service Management Tool (JIRA) | 5d | 2019-04-08 | 2019-04-12 | 110 | 349d |  | BM | 40h |
| 212 | 2.4.1.2.4 | General site set-up | 20d | 2019-04-08 | 2019-05-09 | 110 | 334d |  | BM | 160h |

| ID | WBS | Task | Duration | Start | Finish | Predecessors | Total slack | Free slack | Resources | Work |
| --- | --- | --- | --- | --- | --- | --- | --- | --- | --- | --- |
| 213 | 2.4.1.3 | **Development & Testing** | 20d | 2019-04-08 | 2019-05-09 |  | 334d |  | BM | 480h |
| 214 | 2.4.1.3.1 | Technical documentation | 20d | 2019-04-08 | 2019-05-09 | 110 | 334d |  | BM | 160h |
| 215 | 2.4.1.3.2 | Test Management Plan | 20d | 2019-04-08 | 2019-05-09 | 110 | 334d |  | BM | 160h |
| 216 | 2.4.2 | **Sprint 1** | 49d | 2019-05-10 | 2019-07-17 |  | 93d |  |  | 8680h |
| 217 | 2.4.2.1 | Sprint 0 Summary Meeting | 1d | 2019-05-14 | 2019-05-14 | 193FS+2d | 331d |  | BM | 8h |
| 218 | 2.4.2.2 | **Functional Analysis** | 49d | 2019-05-10 | 2019-07-17 |  | 285d |  | BM | 4088h |
| 219 | 2.4.2.2.1 | **New functional Analysis** | 40d | 2019-05-23 | 2019-07-17 |  | 285d |  | BM | 640h |
| 220 | 2.4.2.2.1.1 | Previous Campaigns | 40d | 2019-05-23 | 2019-07-17 | 192 | 285d |  | BM | 320h |
| 221 | 2.4.2.2.2 | **Updated functional Analysis** | 49d | 2019-05-10 | 2019-07-17 |  | 285d |  | BM | 3056h |
| 222 | 2.4.2.2.2.1 | Become a Media Partner | 40d | 2019-05-10 | 2019-07-04 | 193 | 294d |  | BM | 320h |
| 223 | 2.4.2.2.2.2 | Become a Campaign Partner | 40d | 2019-05-10 | 2019-07-04 | 193 | 294d |  | BM | 320h |
| 224 | 2.4.2.2.2.3 | Glossary | 40d | 2019-05-10 | 2019-07-04 | 193 | 294d |  | BM | 320h |
| 225 | 2.4.2.2.2.4 | Events (list + Detail) | 40d | 2019-05-10 | 2019-07-04 | 193 | 294d |  | BM | 320h |
| 226 | 2.4.2.2.2.5 | National Focal Points (List + Detail) | 40d | 2019-05-10 | 2019-07-04 | 193 | 294d |  | BM | 320h |
| 227 | 2.4.2.2.2.6 | OCPs (List + Detail) | 40d | 2019-05-10 | 2019-07-04 | 193 | 294d |  | BM | 320h |
| 228 | 2.4.2.2.2.7 | MPs (List + Detail) | 40d | 2019-05-10 | 2019-07-04 | 193 | 294d |  | BM | 320h |
| 229 | 2.4.2.2.2.8 | EEN (List + Detail) | 40d | 2019-05-10 | 2019-07-04 | 193 | 285d | 0d | BM | 320h |
| 230 | 2.4.2.2.2.9 | Revision and feedback | 4d | 2019-07-05 | 2019-07-10 | 229 | 285d | 0d | EU-OSHA; PwC | 64h |
| 231 | 2.4.2.2.2.10 | Update according to the feedback | 3d | 2019-07-11 | 2019-07-15 | 230 | 285d | 0d | BM | 24h |
| 232 | 2.4.2.2.2.11 | Validation | 2d | 2019-07-16 | 2019-07-17 | 231 | 285d |  | EU-OSHA | 16h |
| 233 | 2.4.2.3 | **Development & Testing** | 38d | 2019-05-10 | 2019-07-02 |  | 93d | 0d | BM | 4560h |
| 234 | 2.4.2.3.1 | Splash Page | 38d | 2019-05-10 | 2019-07-02 | 193 | 93d |  | BM | 304h |
| 235 | 2.4.2.3.2 | Introductory page - Article | 38d | 2019-05-10 | 2019-07-02 | 193 | 93d |  | BM | 304h |
| 236 | 2.4.2.3.3 | Introductory page - Tools & Publications | 38d | 2019-05-10 | 2019-07-02 | 193 | 93d |  | BM | 304h |
| 237 | 2.4.2.3.4 | Introductory Page - Become a Campaign Partner | 38d | 2019-05-10 | 2019-07-02 | 193 | 93d |  | BM | 304h |
| 238 | 2.4.2.3.5 | Introductory Page -Media Centre | 38d | 2019-05-10 | 2019-07-02 | 193 | 93d |  | BM | 304h |
| 239 | 2.4.2.3.6 | Introductory Page - Previous Campaigns | 38d | 2019-05-10 | 2019-07-02 | 193 | 93d |  | BM | 304h |
| 240 | 2.4.2.3.7 | Campaign Material list & detail | 38d | 2019-05-10 | 2019-07-02 | 193 | 93d |  | BM | 304h |
| 241 | 2.4.2.3.8 | Publications List & Detail | 38d | 2019-05-10 | 2019-07-02 | 193 | 93d |  | BM | 304h |
| 242 | 2.4.2.3.9 | News | 38d | 2019-05-10 | 2019-07-02 | 193 | 93d |  | BM | 304h |
| 243 | 2.4.2.3.10 | Get involved | 38d | 2019-05-10 | 2019-07-02 | 193 | 93d |  | BM | 304h |
| 244 | 2.4.2.3.11 | Header &Footer | 38d | 2019-05-10 | 2019-07-02 | 193 | 93d |  | BM | 304h |
| 245 | 2.4.2.3.12 | Site map & Accedibility page &legal notice & privacy notice | 38d | 2019-05-10 | 2019-07-02 | 193 | 93d |  | BM | 304h |
| 246 | 2.4.2.3.13 | Contact us | 38d | 2019-05-10 | 2019-07-02 | 193 | 93d |  | BM | 304h |
| 247 | 2.4.2.3.14 | General search | 38d | 2019-05-10 | 2019-07-02 | 193 | 93d |  | BM | 304h |

| ID | WBS | Task | Duration | Start | Finish | Predecessors | Total slack | Free slack | Resources | Work |
| --- | --- | --- | --- | --- | --- | --- | --- | --- | --- | --- |
| 248 | 2.4.2.4 | **Testing** | 1d | 2019-07-04 | 2019-07-04 |  | 294d |  | BM | 24h |
| 249 | 2.4.2.4.1 | Accessibility Test | 1d | 2019-07-04 | 2019-07-04 | 349 | 294d |  | BM | 8h |
| 250 | 2.4.2.4.2 | Create a Test Report | 1d | 2019-07-04 | 2019-07-04 | 349 | 294d |  | BM | 8h |
| 251 | 2.4.3 | **Sprint 2** | 41d | 2019-07-05 | 2019-09-05 |  | 93d |  |  | 5768h |
| 252 | 2.4.3.1 | Sprint 1 Summary Meeting | 1d | 2019-07-09 | 2019-07-09 | 349FS+3d | 93d | 0d |  |  |
| 253 | 2.4.3.2 | **Functional Analysis** | 40d | 2019-07-05 | 2019-09-04 |  | 254d |  |  | 1064h |
| 254 | 2.4.3.2.1 | **New functional Analysis** | 40d | 2019-07-05 | 2019-09-04 |  | 254d |  |  | 1064h |
| 255 | 2.4.3.2.1.1 | GPA | 40d | 2019-07-05 | 2019-09-04 | 252FS-3d | 254d |  | BM | 320h |
| 256 | 2.4.3.2.1.2 | Get your certificate | 40d | 2019-07-05 | 2019-09-04 | 252FS-3d | 254d |  | BM | 320h |
| 257 | 2.4.3.2.1.3 | Newsletter | 40d | 2019-07-05 | 2019-09-04 | 252FS-3d | 254d |  | BM | 320h |
| 258 | 2.4.3.2.1.4 | Revision and feedback | 4d | 2019-07-05 | 2019-07-10 | 252FS-3d | 290d |  | EU-OSHA; PwC | 64h |
| 259 | 2.4.3.2.1.5 | Update according to the feedback | 3d | 2019-07-05 | 2019-07-09 | 252FS-3d | 291d |  | BM | 24h |
| 260 | 2.4.3.2.1.6 | Validation | 2d | 2019-07-05 | 2019-07-08 | 252FS-3d | 292d |  | EU-OSHA | 16h |
| 261 | 2.4.3.3 | **Development & Testing** | 39d | 2019-07-05 | 2019-09-03 |  | 93d | 0d | BM | 4056h |
| 262 | 2.4.3.3.1 | Translation workflow | 39d | 2019-07-05 | 2019-09-03 | 252FS-3d | 93d |  | BM | 312h |
| 263 | 2.4.3.3.2 | Become a Media Partner | 39d | 2019-07-05 | 2019-09-03 | 252FS-3d | 93d |  | BM | 312h |
| 264 | 2.4.3.3.3 | Press Room (List & Detail) | 39d | 2019-07-05 | 2019-09-03 | 252FS-3d | 93d |  | BM | 312h |
| 265 | 2.4.3.3.4 | RSS, cookies notification | 39d | 2019-07-05 | 2019-09-03 | 252FS-3d | 93d |  | BM | 312h |
| 266 | 2.4.3.3.5 | LDAP integration | 39d | 2019-07-05 | 2019-09-03 | 252FS-3d | 93d |  | BM | 312h |
| 267 | 2.4.3.3.6 | Previous Campaign, DS campaign, All ages Campaign | 39d | 2019-07-05 | 2019-09-03 | 252FS-3d | 93d |  | BM | 312h |
| 268 | 2.4.3.3.7 | Event list detail, backend | 39d | 2019-07-05 | 2019-09-03 | 252FS-3d | 93d |  | BM | 312h |
| 269 | 2.4.3.3.8 | European week | 39d | 2019-07-05 | 2019-09-03 | 252FS-3d | 93d |  | BM | 312h |
| 270 | 2.4.3.3.9 | National FPs (List & Detail) | 39d | 2019-07-05 | 2019-09-03 | 252FS-3d | 93d |  | BM | 312h |
| 271 | 2.4.3.3.10 | OCPs (List & detail) | 39d | 2019-07-05 | 2019-09-03 | 252FS-3d | 93d |  | BM | 312h |
| 272 | 2.4.3.3.11 | MPs (List & Detail) | 39d | 2019-07-05 | 2019-09-03 | 252FS-3d | 93d |  | BM | 312h |
| 273 | 2.4.3.3.12 | EEN (List & Detail) | 39d | 2019-07-05 | 2019-09-03 | 252FS-3d | 93d |  | BM | 312h |

| ID | WBS | Task | Duration | Start | Finish | Predecessors | Total slack | Free slack | Constraint | Resources | Work |
| --- | --- | --- | --- | --- | --- | --- | --- | --- | --- | --- | --- |
| 274 | 2.4.3.4 | **Graphical designs** | 39d | 2019-07-05 | 2019-09-03 |  | 255d |  |  | BM | 624h |
| 275 | 2.4.3.4.1 | Include the CSS | 39d | 2019-07-05 | 2019-09-03 | 252FS-3d | 255d |  |  | BM | 312h |
| 276 | 2.4.3.5 | **Testing** | 1d | 2019-09-05 | 2019-09-05 |  | 253d |  |  | BM | 24h |
| 277 | 2.4.3.5.1 | Accessibility Test | 1d | 2019-09-05 | 2019-09-05 | 352 | 253d |  |  | BM | 8h |
| 278 | 2.4.3.5.2 | Create a Test Report | 1d | 2019-09-05 | 2019-09-05 | 352 | 253d |  |  | BM | 8h |
| 279 | 2.4.4 | **Sprint 3** | 45d | 2019-09-05 | 2019-11-07 |  | 93d |  |  |  | 8592h |
| 280 | 2.4.4.1 | Sprint 2 Summary Meeting | 1d | 2019-09-05 | 2019-09-05 | 352 | 93d | 0d | finish no earlier than 2017-09-01 | BM | 8h |
| 281 | 2.4.4.2 | **Functional Analysis** | 40d | 2019-09-06 | 2019-10-31 |  | 213d |  |  | BM | 1920h |
| 282 | 2.4.4.2.1 | **Updated functional Analysis** | 40d | 2019-09-06 | 2019-10-31 |  | 213d |  |  | BM | 1600h |
| 283 | 2.4.4.2.1.1 | Priority Areas | 40d | 2019-09-06 | 2019-10-31 | 280 | 213d |  |  | BM | 320h |
| 284 | 2.4.4.2.1.2 | Case studies (List + Detail) | 40d | 2019-09-06 | 2019-10-31 | 280 | 213d |  |  | BM | 320h |
| 285 | 2.4.4.2.1.3 | Practical Tools (List + Detail) | 40d | 2019-09-06 | 2019-10-31 | 280 | 213d |  |  | BM | 320h |
| 286 | 2.4.4.2.1.4 | Napo Film | 40d | 2019-09-06 | 2019-10-31 | 280 | 213d |  |  | BM | 320h |
| 287 | 2.4.4.3 | **Development & Testing** | 42d | 2019-09-06 | 2019-11-05 |  | 93d | 0d |  | BM | 5040h |
| 288 | 2.4.4.3.1 | Home Page (Complete development) | 42d | 2019-09-06 | 2019-11-05 | 280 | 93d |  | finish no earlier than 2017-09-29 | BM | 336h |
| 289 | 2.4.4.3.2 | Glossary | 42d | 2019-09-06 | 2019-11-05 | 280 | 93d |  | finish no earlier than 2017-09-29 | BM | 336h |
| 290 | 2.4.4.3.3 | Campaign Toolkit | 42d | 2019-09-06 | 2019-11-05 | 280 | 93d |  | finish no earlier than 2017-09-29 | BM | 336h |
| 291 | 2.4.4.3.4 | GPA | 42d | 2019-09-06 | 2019-11-05 | 280 | 93d |  | finish no earlier than 2017-09-29 | BM | 336h |
| 292 | 2.4.4.3.5 | Photo Gallery | 42d | 2019-09-06 | 2019-11-05 | 280 | 93d |  | finish no earlier than 2017-09-29 | BM | 336h |
| 293 | 2.4.4.3.6 | Social Media | 42d | 2019-09-06 | 2019-11-05 | 280 | 93d |  | finish no earlier than 2017-09-29 | BM | 336h |
| 294 | 2.4.4.3.7 | Get your certificate | 42d | 2019-09-06 | 2019-11-05 | 280 | 93d |  | finish no earlier than 2017-09-29 | BM | 336h |
| 295 | 2.4.4.3.8 | Newsletter | 42d | 2019-09-06 | 2019-11-05 | 280 | 93d |  | finish no earlier than 2017-09-29 | BM | 336h |
| 296 | 2.4.4.3.9 | Broken Links checker | 42d | 2019-09-06 | 2019-11-05 | 280 | 93d |  |  | BM | 336h |
| 297 | 2.4.4.3.10 | Lingua Tools | 42d | 2019-09-06 | 2019-11-05 | 280 | 93d |  |  | BM | 336h |
| 298 | 2.4.4.3.11 | Search and Replace | 42d | 2019-09-06 | 2019-11-05 | 280 | 93d |  |  | BM | 336h |
| 299 | 2.4.4.3.12 | Reuse Files and pictures | 42d | 2019-09-06 | 2019-11-05 | 280 | 93d |  |  | BM | 336h |
| 300 | 2.4.4.3.13 | CMW | 42d | 2019-09-06 | 2019-11-05 | 280 | 93d |  |  | BM | 336h |
| 301 | 2.4.4.3.14 | MSD's | 42d | 2019-09-06 | 2019-11-05 | 280 | 93d |  |  | BM | 336h |

| ID | WBS | Task | Duration | Start | Finish | Predecessors | Total slack | Free slack | Constraint | Resources | Work |
| --- | --- | --- | --- | --- | --- | --- | --- | --- | --- | --- | --- |
| 302 | 2.4.4.4 | **Testing** | 1d | 2019-11-07 | 2019-11-07 |  | 209d |  |  | BM | 24h |
| 303 | 2.4.4.4.1 | Accessibility Test | 1d | 2019-11-07 | 2019-11-07 | 355 | 209d |  |  | BM | 8h |
| 304 | 2.4.4.4.2 | Create a Test Report | 1d | 2019-11-07 | 2019-11-07 | 355 | 209d |  |  | BM | 8h |
| 305 | 2.4.4.5 | **Integration with CDB** | 40d | 2019-09-06 | 2019-10-31 |  | 213d |  |  | BM | 1600h |
| 306 | 2.4.4.5.1 | Application, Maintenance PHP forms | 40d | 2019-09-06 | 2019-10-31 | 280 | 213d |  |  | BM | 320h |
| 307 | 2.4.4.5.2 | XML | 40d | 2019-09-06 | 2019-10-31 | 280 | 213d |  |  | BM | 320h |
| 308 | 2.4.4.5.3 | News items & events excel file | 40d | 2019-09-06 | 2019-10-31 | 280 | 213d |  | finish no earlier than 2017-09-29 | BM | 320h |
| 309 | 2.4.4.5.4 | Pass the credentials | 40d | 2019-09-06 | 2019-10-31 | 280 | 213d |  |  | BM | 320h |
| 310 | 2.4.5 | **Sprint 4** | 43d | 2019-11-06 | 2020-01-09 |  | 93d |  |  |  | 2640h |
| 311 | 2.4.5.1 | Sprint 3 Summary Meeting | 1d | 2019-11-07 | 2019-11-07 | 355 | 209d |  | start no earlier than 2019-09-04 | BM | 8h |
| 312 | 2.4.5.2 | **Development & Testing** | 41d | 2019-11-06 | 2020-01-07 |  | 93d | 0d |  | BM | 1968h |
| 313 | 2.4.5.2.1 | Case Stadies (List & Detail) | 41d | 2019-11-06 | 2020-01-07 | 287 | 93d |  |  | BM | 328h |
| 314 | 2.4.5.2.2 | GPE | 41d | 2019-11-06 | 2020-01-07 | 287 | 93d |  |  | BM | 328h |
| 315 | 2.4.5.2.3 | Priority Areas ( Introductory & Detail) | 41d | 2019-11-06 | 2020-01-07 | 287 | 93d |  |  | BM | 328h |
| 316 | 2.4.5.2.4 | Videos | 41d | 2019-11-06 | 2020-01-07 | 287 | 93d |  |  | BM | 328h |
| 317 | 2.4.5.2.5 | Practical Tools (List & Detail) | 41d | 2019-11-06 | 2020-01-07 | 287 | 93d |  |  | BM | 328h |
| 318 | 2.4.5.3 | **Testing** | 1d | 2020-01-09 | 2020-01-09 |  | 168d |  |  | BM | 24h |
| 319 | 2.4.5.3.1 | Accessibility Test | 1d | 2020-01-09 | 2020-01-09 | 358 | 168d |  | start no earlier than 2019-10-04 | BM | 8h |
| 320 | 2.4.5.3.2 | Create a Test Report | 1d | 2020-01-09 | 2020-01-09 | 358 | 168d |  | start no earlier than 2019-10-04 | BM | 8h |
| 321 | 2.4.5.4 | **Content Management** | 40d | 2019-11-06 | 2020-01-03 |  | 171d |  |  | BM | 640h |
| 322 | 2.4.5.4.1 | Upload content | 40d | 2019-11-06 | 2020-01-03 | 287 | 171d |  | finish no earlier than 2019-10-02 | BM | 320h |
| 323 | 2.4.6 | **Sprint 5** | 42d | 2020-01-08 | 2020-03-05 |  | 93d |  |  |  | 3752h |
| 324 | 2.4.6.1 | Sprint 4 Summary Meeting | 1d | 2020-01-09 | 2020-01-09 | 358 | 168d |  | start no earlier than 2019-09-04 | BM | 8h |
| 325 | 2.4.6.2 | **Development & Testing** | 40d | 2020-01-08 | 2020-03-03 |  | 93d | 0d |  | BM | 3240h |
| 326 | 2.4.6.2.1 | PZ: My Public Profile | 40d | 2020-01-08 | 2020-03-03 | 312 | 93d |  |  | BM | 320h |
| 327 | 2.4.6.2.2 | PZ: GPE Platform | 40d | 2020-01-08 | 2020-03-03 | 312 | 93d |  |  | BM | 320h |
| 328 | 2.4.6.2.3 | PZ: Partners Resources | 40d | 2020-01-08 | 2020-03-03 | 312 | 93d |  |  | BM | 320h |
| 329 | 2.4.6.2.4 | PZ: Act as a partner | 40d | 2020-01-08 | 2020-03-03 | 312 | 93d |  |  | BM | 320h |
| 330 | 2.4.6.2.5 | PZ: Graphical Designs PZ | 40d | 2020-01-08 | 2020-03-03 | 312 | 93d |  |  | BM | 320h |
| 331 | 2.4.6.2.6 | PZ: News | 40d | 2020-01-08 | 2020-03-03 | 312 | 93d |  |  | BM | 320h |
| 332 | 2.4.6.2.7 | PZ: Events | 40d | 2020-01-08 | 2020-03-03 | 312 | 93d |  |  | BM | 320h |
| 333 | 2.4.6.2.8 | PZ: CMW | 40d | 2020-01-08 | 2020-03-03 | 312 | 93d |  |  | BM | 320h |
| 334 | 2.4.6.2.9 | PZ: Login | 40d | 2020-01-08 | 2020-03-03 | 312 | 93d |  |  | BM | 320h |
| 335 | 2.4.6.2.10 | Implementation of Usability Recommendations | 5d | 2020-02-21 | 2020-02-27 | 426 | 96d |  |  | BM | 40h |

| ID | WBS | Task | Duration | Start | Finish | Predecessors | Total slack | Free slack | Constraint | Resources | Work |
| --- | --- | --- | --- | --- | --- | --- | --- | --- | --- | --- | --- |
| 336 | 2.4.6.3 | **Testing** | 1d | 2020-03-05 | 2020-03-05 |  | 128d |  |  | BM | 24h |
| 337 | 2.4.6.3.1 | Accessibility Test | 1d | 2020-03-05 | 2020-03-05 | 362 | 128d |  | start no earlier than 2019-10-04 | BM | 8h |
| 338 | 2.4.6.3.2 | Create a Test Report | 1d | 2020-03-05 | 2020-03-05 | 362 | 128d |  | start no earlier than 2019-10-04 | BM | 8h |
| 339 | 2.4.6.4 | **Content Management** | 20d | 2020-01-08 | 2020-02-04 |  | 150d |  |  | BM | 320h |
| 340 | 2.4.6.4.1 | Modify contents and literals, if needed | 20d | 2020-01-08 | 2020-02-04 | 312 | 150d |  | finish no earlier than 2019-10-02 | BM | 160h |
| 341 | 2.4.6.5 | **SEO** | 20d | 2020-01-24 | 2020-02-20 |  | 138d |  |  |  | 160h |
| 342 | 2.4.6.5.1 | Review SEO | 10d | 2020-01-24 | 2020-02-06 | 358 | 138d | 0d | finish no earlier than 2020-02-06 | Codesyntax | 80h |
| 343 | 2.4.6.5.2 | Implementation of SEO Recommendation | 10d | 2020-02-07 | 2020-02-20 | 342 | 138d |  |  | BM | 80h |
| 344 | 2.5 | **STAGING ENVIRONMENT** | 196d | 2019-06-27 | 2020-04-08 |  | 97d |  |  |  | 3976h |
| 345 | 2.5.1 | **Deployments** | 196d | 2019-06-27 | 2020-04-08 |  | 97d |  |  |  | 304h |
| 346 | 2.5.1.1 | **Preparation of the environment** | 1d | 2019-06-27 | 2019-06-27 |  | 299d |  |  |  | 16h |
| 347 | 2.5.1.1.1 | Preparation of the environment | 1d | 2019-06-27 | 2019-06-27 | 349FS-5d | 299d |  |  | MAINSTRAT; EU-OSHA | 16h |
| 348 | 2.5.1.2 | **Sprint 1** | 6d | 2019-07-03 | 2019-07-10 |  | 93d |  |  |  | 48h |
| 349 | 2.5.1.2.1 | 1st Deployment in STAGING | 1d | 2019-07-03 | 2019-07-03 | 233 | 93d | 0d | finish no earlier than 2017-08-04 | EU-OSHA; BM; MAINSTRAT | 24h |
| 350 | 2.5.1.2.2 | 2nd Deployment in STAGING (after PwC 2nd Level Testing for UAT ) | 1d | 2019-07-10 | 2019-07-10 | 371 | 118d | 0d | finish no earlier than 2017-09-06 | EU-OSHA; BM; MAINSTRAT | 24h |
| 351 | 2.5.1.3 | **2nd Sprint** | 11d | 2019-09-04 | 2019-09-18 |  | 93d |  |  |  | 48h |
| 352 | 2.5.1.3.1 | 1st Deployment in STAGING | 1d | 2019-09-04 | 2019-09-04 | 261, 378 | 93d | 0d | finish no earlier than 2017-10-04 | EU-OSHA; BM; MAINSTRAT | 24h |
| 353 | 2.5.1.3.2 | 2nd Deployment in STAGING (after PwC 2nd Level Testing for UAT) | 1d | 2019-09-18 | 2019-09-18 | 384 | 137d | 0d | finish no earlier than 2017-10-25 | EU-OSHA; BM; MAINSTRAT | 24h |
| 354 | 2.5.1.4 | **3rd Sprint** | 11d | 2019-11-06 | 2019-11-20 |  | 115d |  |  |  | 48h |
| 355 | 2.5.1.4.1 | 1st Deployment in STAGING | 1d | 2019-11-06 | 2019-11-06 | 287, 391 | 115d | 0d |  | EU-OSHA; BM; MAINSTRAT | 24h |
| 356 | 2.5.1.4.2 | 2nd Deployment in STAGING (after PwC 2nd Level Testing for UAT) | 1d | 2019-11-20 | 2019-11-20 | 397 | 115d | 0d |  | EU-OSHA; BM; MAINSTRAT | 24h |
| 357 | 2.5.1.5 | **4th Sprint** | 26d | 2020-01-08 | 2020-02-12 |  | 96d |  |  |  | 72h |
| 358 | 2.5.1.5.1 | 1st Deployment in STAGING | 1d | 2020-01-08 | 2020-01-08 | 312, 404 | 96d | 0d |  | EU-OSHA; BM; MAINSTRAT | 24h |
| 359 | 2.5.1.5.2 | 2nd Deployment in STAGING (after PwC 2nd Level Testing for UAT) | 1d | 2020-01-22 | 2020-01-22 | 410 | 96d | 0d |  | EU-OSHA; BM; MAINSTRAT | 24h |
| 360 | 2.5.1.5.3 | 3rd Deployment in STAGING after UAT | 1d | 2020-02-12 | 2020-02-12 | 417 | 105d | 0d |  | EU-OSHA; BM; MAINSTRAT | 24h |

| ID | WBS | Task | Duration | Start | Finish | Predecessors | Total slack | Free slack | Constraint | Resources | Work |
| --- | --- | --- | --- | --- | --- | --- | --- | --- | --- | --- | --- |
| 361 | 2.5.1.6 | **5th Sprint** | 26d | 2020-03-04 | 2020-04-08 |  | 93d |  |  |  | 72h |
| 362 | 2.5.1.6.1 | 1st Deployment in STAGING | 1d | 2020-03-04 | 2020-03-04 | 325, 417 | 93d | 0d |  | EU-OSHA; BM; MAINSTRAT | 24h |
| 363 | 2.5.1.6.2 | 2nd Deployment in STAGING (after PwC 2nd Level Testing for UAT) | 1d | 2020-03-18 | 2020-03-18 | 433 | 93d | 0d |  | EU-OSHA; BM; MAINSTRAT | 24h |
| 364 | 2.5.1.6.3 | 3rd Deployment in STAGING after UAT | 1d | 2020-04-08 | 2020-04-08 | 440 | 104d |  |  | EU-OSHA; BM; MAINSTRAT | 24h |
| 365 | 2.5.2 | **2nd level testing, UATs and UX testing** | 190d | 2019-07-04 | 2020-04-07 |  | 105d |  |  |  | 3672h |
| 366 | 2.5.2.1 | **1st Sprint** | 15d | 2019-07-04 | 2019-07-24 |  | 118d |  |  | PwC | 472h |
| 367 | 2.5.2.1.1 | **PwC 2nd Level Testing** | 6d | 2019-07-04 | 2019-07-11 |  | 118d |  |  | PwC | 152h |
| 368 | 2.5.2.1.1.1 | Test functionality in English | 3d | 2019-07-04 | 2019-07-08 | 349 | 118d | 0d | finish no earlier than 2017-08-11 | PwC | 24h |
| 369 | 2.5.2.1.1.2 | Validate design CSS in English (PC + Tablet + Mobile) | 3d | 2019-07-04 | 2019-07-08 | 349 | 292d |  | finish no earlier than 2017-08-16 | PwC | 24h |
| 370 | 2.5.2.1.1.3 | Review Design in different Browsers (IE, Chrome, Firefox) | 3d | 2019-07-04 | 2019-07-08 | 349 | 292d |  | finish no earlier than 2017-08-18 | PwC | 24h |
| 371 | 2.5.2.1.1.4 | Fix issues for 1st Deployment | 3d | 2019-07-05 | 2019-07-09 | 368FS-2d | 118d | 0d |  | BM | 24h |
| 372 | 2.5.2.1.1.5 | Review fixing | 1d | 2019-07-11 | 2019-07-11 | 350 | 118d | 0d | finish no earlier than 2017-09-07 | PwC | 8h |
| 373 | 2.5.2.1.2 | **User Aceptance Test** | 9d | 2019-07-12 | 2019-07-24 |  | 118d |  |  |  | 200h |
| 374 | 2.5.2.1.2.1 | Guided Test | 1d | 2019-07-12 | 2019-07-12 | 372 | 118d | 0d | finish no earlier than 2017-09-11 | BM; EU-OSHA; PwC | 24h |
| 375 | 2.5.2.1.2.2 | Validation by EU-OSHA | 5d | 2019-07-15 | 2019-07-19 | 374 | 283d |  | finish no earlier than 2017-09-15 | EU-OSHA | 40h |
| 376 | 2.5.2.1.2.3 | Review and Fix Broken Links | 5d | 2019-07-15 | 2019-07-19 | 374 | 283d |  | finish no earlier than 2017-09-15 | EU-OSHA | 40h |
| 377 | 2.5.2.1.2.4 | Support& Resolution of incidents | 5d | 2019-07-15 | 2019-07-19 | 374 | 283d |  | finish no earlier than 2017-09-19 | BM | 40h |
| 378 | 2.5.2.1.2.5 | Fix issues | 7d | 2019-07-16 | 2019-07-24 | 374FS+1d | 118d | 25d | finish no earlier than 2017-09-27 | BM | 56h |
| 379 | 2.5.2.2 | **2nd Sprint** | 21d | 2019-09-05 | 2019-10-03 |  | 137d |  |  | PwC | 656h |
| 380 | 2.5.2.2.1 | **PwC 2nd Level Testing** | 13d | 2019-09-05 | 2019-09-23 |  | 137d |  |  | PwC | 288h |
| 381 | 2.5.2.2.1.1 | Test functionality in English | 4d | 2019-09-05 | 2019-09-10 | 352 | 137d | 0d | finish no earlier than 2017-10-10 | PwC | 32h |
| 382 | 2.5.2.2.1.2 | Validate design CSS in English (PC + Tablet + Mobile) | 4d | 2019-09-05 | 2019-09-10 | 352 | 250d |  | finish no earlier than 2017-10-13 | PwC | 32h |
| 383 | 2.5.2.2.1.3 | Review Design in different Browsers (IE, Chrome, Firefox) | 4d | 2019-09-05 | 2019-09-10 | 352 | 250d |  | finish no earlier than 2017-10-17 | PwC | 32h |
| 384 | 2.5.2.2.1.4 | Fix issues for 1st Deployment | 8d | 2019-09-06 | 2019-09-17 | 381FS-3d | 137d | 0d | finish no earlier than 2017-10-24 | BM | 64h |
| 385 | 2.5.2.2.1.5 | Review fixing | 3d | 2019-09-19 | 2019-09-23 | 353 | 137d | 0d | finish no earlier than 2017-10-26 | PwC | 24h |

| ID | WBS | Task | Duration | Start | Finish | Predecessors | Total slack | Free slack | Constraint | Resources | Work |
| --- | --- | --- | --- | --- | --- | --- | --- | --- | --- | --- | --- |
| 386 | 2.5.2.2.2 | **User Aceptance Test** | 8d | 2019-09-24 | 2019-10-03 |  | 137d |  |  |  | 200h |
| 387 | 2.5.2.2.2.1 | Guided Test | 1d | 2019-09-24 | 2019-09-24 | 385 | 137d | 0d | finish no earlier than 2017-10-27 | BM; EU-OSHA; PwC | 24h |
| 388 | 2.5.2.2.2.2 | Validation by EU-OSHA | 5d | 2019-09-25 | 2019-10-01 | 387 | 235d |  | finish no earlier than 2017-11-07 | EU-OSHA | 40h |
| 389 | 2.5.2.2.2.3 | Review and Fix Broken Links | 5d | 2019-09-25 | 2019-10-01 | 387 | 235d |  | finish no earlier than 2017-11-03 | EU-OSHA | 40h |
| 390 | 2.5.2.2.2.4 | Support& Resolution of incidents | 5d | 2019-09-25 | 2019-10-01 | 387 | 235d |  | finish no earlier than 2017-11-07 | BM | 40h |
| 391 | 2.5.2.2.2.5 | Fix issues | 7d | 2019-09-25 | 2019-10-03 | 387 | 137d | 22d | finish no earlier than 2017-11-10 | BM | 56h |
| 392 | 2.5.2.3 | **3rd Sprint** | 21d | 2019-11-07 | 2019-12-05 |  | 115d |  |  | PwC | 656h |
| 393 | 2.5.2.3.1 | **PwC 2nd Level Testing** | 13d | 2019-11-07 | 2019-11-25 |  | 115d |  |  | PwC | 288h |
| 394 | 2.5.2.3.1.1 | Test functionality in English | 4d | 2019-11-07 | 2019-11-12 | 355 | 115d | 0d | finish no earlier than 2017-10-10 | PwC | 32h |
| 395 | 2.5.2.3.1.2 | Validate design CSS in English (PC + Tablet + Mobile) | 4d | 2019-11-07 | 2019-11-12 | 355 | 206d |  | finish no earlier than 2017-10-13 | PwC | 32h |
| 396 | 2.5.2.3.1.3 | Review Design in different Browsers (IE, Chrome, Firefox) | 4d | 2019-11-07 | 2019-11-12 | 355 | 206d |  | finish no earlier than 2017-10-17 | PwC | 32h |
| 397 | 2.5.2.3.1.4 | Fix issues for 1st Deployment | 8d | 2019-11-08 | 2019-11-19 | 394FS-3d | 115d | 0d | finish no earlier than 2017-10-24 | BM | 64h |
| 398 | 2.5.2.3.1.5 | Review fixing | 3d | 2019-11-21 | 2019-11-25 | 356 | 115d | 0d | finish no earlier than 2017-10-26 | PwC | 24h |
| 399 | 2.5.2.3.2 | **User Aceptance Test** | 8d | 2019-11-26 | 2019-12-05 |  | 115d |  |  |  | 200h |
| 400 | 2.5.2.3.2.1 | Guided Test | 1d | 2019-11-26 | 2019-11-26 | 398 | 115d | 0d | finish no earlier than 2017-10-27 | BM; EU-OSHA; PwC | 24h |
| 401 | 2.5.2.3.2.2 | Validation by EU-OSHA | 5d | 2019-11-27 | 2019-12-03 | 400 | 191d |  | finish no earlier than 2017-11-07 | EU-OSHA | 40h |
| 402 | 2.5.2.3.2.3 | Review and Fix Broken Links | 5d | 2019-11-27 | 2019-12-03 | 400 | 191d |  | finish no earlier than 2017-11-03 | EU-OSHA | 40h |
| 403 | 2.5.2.3.2.4 | Support& Resolution of incidents | 5d | 2019-11-27 | 2019-12-03 | 400 | 191d |  | finish no earlier than 2017-11-07 | BM | 40h |
| 404 | 2.5.2.3.2.5 | Fix issues | 7d | 2019-11-27 | 2019-12-05 | 400 | 115d | 19d | finish no earlier than 2017-11-10 | BM | 56h |
| 405 | 2.5.2.4 | **4th Sprint** | 38d | 2019-12-27 | 2020-02-20 |  | 103d |  |  | PwC | 1176h |
| 406 | 2.5.2.4.1 | **PwC 2nd Level Testing** | 13d | 2020-01-09 | 2020-01-27 |  | 96d |  |  | PwC | 288h |
| 407 | 2.5.2.4.1.1 | Test functionality in English | 4d | 2020-01-09 | 2020-01-14 | 358 | 96d | 0d | finish no earlier than 2019-10-09 | PwC | 32h |
| 408 | 2.5.2.4.1.2 | Validate design CSS in English (PC + Tablet + Mobile) | 4d | 2020-01-09 | 2020-01-14 | 358 | 165d |  | finish no earlier than 2019-10-09 | PwC | 32h |
| 409 | 2.5.2.4.1.3 | Review Design in different Browsers (IE, Chrome, Firefox) | 4d | 2020-01-09 | 2020-01-14 | 358 | 165d |  | finish no earlier than 2019-10-09 | PwC | 32h |
| 410 | 2.5.2.4.1.4 | Fix issues for 1st Deployment | 8d | 2020-01-10 | 2020-01-21 | 407FS-3d | 96d | 0d | finish no earlier than 2019-10-16 | BM | 64h |
| 411 | 2.5.2.4.1.5 | Review fixing | 3d | 2020-01-23 | 2020-01-27 | 359 | 96d | 0d | finish no earlier than 2019-10-22 | PwC | 24h |

| ID | WBS | Task | Duration | Start | Finish | Predecessors | Total slack | Free slack | Constraint | Resources | Work |
| --- | --- | --- | --- | --- | --- | --- | --- | --- | --- | --- | --- |
| 412 | 2.5.2.4.2 | **User Aceptance Test** | 15d | 2020-01-28 | 2020-02-17 |  | 105d |  |  |  | 248h |
| 413 | 2.5.2.4.2.1 | Guided Test | 1d | 2020-01-28 | 2020-01-28 | 411 | 105d | 0d | start no earlier than 2019-10-23 | BM; EU-OSHA; PwC | 24h |
| 414 | 2.5.2.4.2.2 | Validation by EU-OSHA | 5d | 2020-01-29 | 2020-02-04 | 413 | 150d |  | finish no earlier than 2019-10-30 | EU-OSHA | 40h |
| 415 | 2.5.2.4.2.3 | Review and Fix Broken Links | 5d | 2020-01-29 | 2020-02-04 | 413 | 150d |  | finish no earlier than 2019-10-30 | EU-OSHA | 40h |
| 416 | 2.5.2.4.2.4 | Support&Resolution of incidents | 5d | 2020-01-29 | 2020-02-04 | 413 | 150d |  | finish no earlier than 2019-10-30 | BM | 40h |
| 417 | 2.5.2.4.2.5 | Fix issues | 10d | 2020-01-29 | 2020-02-11 | 413 | 105d | 0d | finish no earlier than 2019-11-04 | BM | 80h |
| 418 | 2.5.2.4.2.6 | Confirm the fixing of the issues | 3d | 2020-02-13 | 2020-02-17 | 360 | 105d | 0d |  | EU-OSHA | 24h |
| 419 | 2.5.2.4.3 | **Usability Testing with external respondents (Public and Private Zone)** | 38d | 2019-12-27 | 2020-02-20 |  | 116d |  |  |  | 336h |
| 420 | 2.5.2.4.3.1 | Define the proposal scenario and profiles | 8d | 2019-12-27 | 2020-01-09 | 424FS-30d | 160d | 0d |  | KEC | 64h |
| 421 | 2.5.2.4.3.2 | Revision and feedback | 3d | 2020-01-10 | 2020-01-14 | 420 | 160d | 0d |  | EU-OSHA; PwC | 48h |
| 422 | 2.5.2.4.3.3 | Update the scenario | 3d | 2020-01-15 | 2020-01-17 | 421 | 160d | 0d |  | KEC | 24h |
| 423 | 2.5.2.4.3.4 | Validate the scenario | 2d | 2020-01-20 | 2020-01-21 | 422 | 160d |  |  | EU-OSHA | 16h |
| 424 | 2.5.2.4.3.5 | Execute the UX testing | 10d | 2020-01-28 | 2020-02-10 | 411 | 96d | 0d |  | KEC | 80h |
| 425 | 2.5.2.4.3.6 | Delivery the report | 3d | 2020-02-11 | 2020-02-13 | 424 | 96d | 0d |  | KEC | 24h |
| 426 | 2.5.2.4.3.7 | Review the report and decide the improvements | 5d | 2020-02-14 | 2020-02-20 | 425 | 96d | 0d |  | EU-OSHA; PwC | 80h |
| 427 | 2.5.2.5 | Splash Page Go - Non Go decision | 1d | 2020-02-18 | 2020-02-18 | 418 | 140d |  |  | EU-OSHA | 8h |
| 428 | 2.5.2.6 | **5th Sprint** | 24d | 2020-03-05 | 2020-04-07 |  | 93d |  |  | PwC | 704h |
| 429 | 2.5.2.6.1 | **PwC 2nd Level Testing** | 13d | 2020-03-05 | 2020-03-23 |  | 93d |  |  | PwC | 288h |
| 430 | 2.5.2.6.1.1 | Test functionality in English | 4d | 2020-03-05 | 2020-03-10 | 362 | 93d | 0d | finish no earlier than 2019-10-09 | PwC | 32h |
| 431 | 2.5.2.6.1.2 | Validate design CSS in English (PC + Tablet + Mobile) | 4d | 2020-03-05 | 2020-03-10 | 362 | 125d |  | finish no earlier than 2019-10-09 | PwC | 32h |
| 432 | 2.5.2.6.1.3 | Review Design in different Browsers (IE, Chrome, Firefox) | 4d | 2020-03-05 | 2020-03-10 | 362 | 125d |  | finish no earlier than 2019-10-09 | PwC | 32h |
| 433 | 2.5.2.6.1.4 | Fix issues for 1st Deployment | 8d | 2020-03-06 | 2020-03-17 | 430FS-3d | 93d | 0d | finish no earlier than 2019-10-16 | BM | 64h |
| 434 | 2.5.2.6.1.5 | Review fixing | 3d | 2020-03-19 | 2020-03-23 | 363 | 93d | 0d | finish no earlier than 2019-10-22 | PwC | 24h |
| 435 | 2.5.2.6.2 | **User Aceptance Test** | 11d | 2020-03-24 | 2020-04-07 |  | 93d |  |  |  | 224h |
| 436 | 2.5.2.6.2.1 | Guided Test | 1d | 2020-03-24 | 2020-03-24 | 434 | 93d | 0d | start no earlier than 2019-10-23 | BM; EU-OSHA; PwC | 24h |
| 437 | 2.5.2.6.2.2 | Validation by EU-OSHA | 5d | 2020-03-25 | 2020-03-31 | 436 | 110d |  | finish no earlier than 2019-10-30 | EU-OSHA | 40h |
| 438 | 2.5.2.6.2.3 | Review and Fix Broken Links | 5d | 2020-03-25 | 2020-03-31 | 436 | 110d |  | finish no earlier than 2019-10-30 | EU-OSHA | 40h |
| 439 | 2.5.2.6.2.4 | Support&Resolution of incidents | 5d | 2020-03-25 | 2020-03-31 | 436 | 110d |  | finish no earlier than 2019-10-30 | BM | 40h |
| 440 | 2.5.2.6.2.5 | Final Review fixing | 10d | 2020-03-25 | 2020-04-07 | 436 | 93d | 0d | finish no earlier than 2019-11-04 | BM | 80h |

| ID | WBS | Task | Duration | Start | Finish | Predecessors | Total slack | Free slack | Resources | Work |
| --- | --- | --- | --- | --- | --- | --- | --- | --- | --- | --- |
| 441 | 2.6 | **PRODUCTION ENVIRONMENT** | 1545d | 2014-07-01 | 2020-09-01 |  | 0d |  |  | 18840h |
| 442 | 2.6.1 | **Deployments** | 146d | 2019-09-19 | 2020-04-16 |  | 98d |  |  | 168h |
| 443 | 2.6.1.1 | **Preparation of the environment** | 1d | 2019-09-19 | 2019-09-19 |  | 243d |  |  | 24h |
| 444 | 2.6.1.1.1 | Preparation of the environment | 1d | 2019-09-19 | 2019-09-19 | 446FS-5d | 243d |  | EU-OSHA; BM; MAINSTRAT | 24h |
| 445 | 2.6.1.2 | **Sprint 2** | 11d | 2019-09-25 | 2019-10-09 |  | 224d |  |  | 32h |
| 446 | 2.6.1.2.1 | 1st Deployment in Production | 1d | 2019-09-25 | 2019-09-25 | 385FS+1d | 224d | 0d | EU-OSHA; BM | 16h |
| 447 | 2.6.1.2.2 | 2nd Deployment in Production | 1d | 2019-10-09 | 2019-10-09 | 461FS+4d | 224d | 0d | EU-OSHA; BM | 16h |
| 448 | 2.6.1.3 | **Sprint 3** | 10d | 2019-11-27 | 2019-12-11 |  | 181d |  |  | 32h |
| 449 | 2.6.1.3.1 | 1st Deployment in Production | 1d | 2019-11-27 | 2019-11-27 | 398FS+1d | 181d | 0d | EU-OSHA; BM | 16h |
| 450 | 2.6.1.3.2 | 2nd Deployment in Production | 1d | 2019-12-11 | 2019-12-11 | 466FS+3d | 181d | 0d | EU-OSHA; BM | 16h |
| 451 | 2.6.1.4 | **Sprint 4** | 21d | 2020-02-19 | 2020-03-18 |  | 105d |  |  | 48h |
| 452 | 2.6.1.4.1 | 1st Deployment in Production | 1d | 2020-02-19 | 2020-02-19 | 418FS+1d | 105d | 0d | EU-OSHA; BM | 16h |
| 453 | 2.6.1.4.2 | 2nd Deployment in Production | 1d | 2020-03-04 | 2020-03-04 | 471FS+4d | 105d | 0d | EU-OSHA; BM | 16h |
| 454 | 2.6.1.4.3 | 3rd Deployment in Production | 1d | 2020-03-18 | 2020-03-18 | 473FS+4d | 105d | 0d | EU-OSHA; BM | 16h |
| 455 | 2.6.1.5 | **Sprint 5** | 7d | 2020-04-08 | 2020-04-16 |  | 93d |  |  | 32h |
| 456 | 2.6.1.5.1 | 1st Deployment in Production | 1d | 2020-04-08 | 2020-04-08 | 440 | 93d | 0d | EU-OSHA; BM | 16h |
| 457 | 2.6.1.5.2 | 2nd Deployment in Production | 1d | 2020-04-16 | 2020-04-16 | 482 | 93d | 0d | EU-OSHA; BM | 16h |
| 458 | 2.6.2 | **2nd level testing, UATs and UX testing** | 1452d | 2014-07-01 | 2020-04-23 |  | 93d |  |  | 12536h |
| 459 | 2.6.2.1 | **Sprint 2** | 15d | 2019-09-26 | 2019-10-16 |  | 224d |  |  | 128h |
| 460 | 2.6.2.1.1 | Testing by PwC and reporting of issues | 4d | 2019-09-26 | 2019-10-01 | 446 | 224d | 0d | PwC | 32h |
| 461 | 2.6.2.1.2 | Fix issues | 4d | 2019-09-27 | 2019-10-02 | 460FS-3d | 224d | 0d | BM | 32h |
| 462 | 2.6.2.1.3 | Revision by EU-OSHA | 4d | 2019-10-10 | 2019-10-15 | 447 | 224d | 0d | EU-OSHA | 32h |
| 463 | 2.6.2.1.4 | Fix issues | 4d | 2019-10-11 | 2019-10-16 | 462FS-3d | 224d |  | BM | 32h |
| 464 | 2.6.2.2 | **Sprint 3** | 14d | 2019-11-28 | 2019-12-18 |  | 181d |  |  | 128h |
| 465 | 2.6.2.2.1 | Testing by PwC and reporting of issues | 4d | 2019-11-28 | 2019-12-03 | 449 | 181d | 0d | PwC | 32h |
| 466 | 2.6.2.2.2 | Fix issues | 4d | 2019-11-29 | 2019-12-04 | 465FS-3d | 181d | 0d | BM | 32h |
| 467 | 2.6.2.2.3 | Revision by EU-OSHA | 4d | 2019-12-12 | 2019-12-17 | 450 | 181d | 0d | EU-OSHA | 32h |
| 468 | 2.6.2.2.4 | Fix issues | 4d | 2019-12-13 | 2019-12-18 | 467FS-3d | 181d |  | BM | 32h |

| ID | WBS | Task | Duration | Start | Finish | Predecessors | Total slack | Free slack | Resources | Work | Text3 |
| --- | --- | --- | --- | --- | --- | --- | --- | --- | --- | --- | --- |
| 469 | 2.6.2.3 | **Sprint 4** | 34d | 2020-02-20 | 2020-04-07 |  | 105d |  |  | 528h |  |
| 470 | 2.6.2.3.1 | Testing by PwC and reporting of issues | 4d | 2020-02-20 | 2020-02-25 | 452 | 105d | 0d | PwC | 32h |  |
| 471 | 2.6.2.3.2 | Fix issues | 4d | 2020-02-21 | 2020-02-26 | 470FS-3d | 105d | 0d | EU-OSHA | 32h |  |
| 472 | 2.6.2.3.3 | Revision by EU-OSHA | 4d | 2020-03-05 | 2020-03-10 | 453 | 105d | 0d | BM | 32h |  |
| 473 | 2.6.2.3.4 | Fix issues | 4d | 2020-03-06 | 2020-03-11 | 472FS-3d | 105d | 0d | BM | 32h |  |
| 474 | 2.6.2.3.5 | **Stress Tests** | 14d | 2020-03-19 | 2020-04-07 |  | 105d |  | EU-OSHA | 400h |  |
| 475 | 2.6.2.3.5.1 | Define the scenario | 5d | 2020-03-19 | 2020-03-25 | 454 | 114d |  | EU-OSHA; PwC | 80h | Web Team; JG |
| 476 | 2.6.2.3.5.2 | Microsoft Visual Studio 2013 Ultimate | 1d | 2020-03-19 | 2020-03-19 | 454 | 105d | 0d | MAINSTRAT | 8h |  |
| 477 | 2.6.2.3.5.3 | Specify a window or a timeframe for the Stress Tests | 1d | 2020-03-20 | 2020-03-20 | 476 | 105d | 0d | EU-OSHA | 8h | ICT |
| 478 | 2.6.2.3.5.4 | Perform Stress Tests | 2d | 2020-03-23 | 2020-03-24 | 477 | 105d | 0d | BM; MAINSTRAT | 32h | GA |
| 479 | 2.6.2.3.5.5 | Fixing if needed | 10d | 2020-03-25 | 2020-04-07 | 478 | 105d |  | BM; MAINSTRAT | 160h | GA |
| 480 | 2.6.2.4 | **Sprint 5** | 11d | 2020-04-09 | 2020-04-23 |  | 93d |  |  | 128h |  |
| 481 | 2.6.2.4.1 | Testing by PwC and reporting of issues | 4d | 2020-04-09 | 2020-04-14 | 456 | 93d | 0d | PwC | 32h |  |
| 482 | 2.6.2.4.2 | Fix issues | 4d | 2020-04-10 | 2020-04-15 | 481FS-3d | 93d | 0d | EU-OSHA | 32h |  |
| 483 | 2.6.2.4.3 | Revision by EU-OSHA | 4d | 2020-04-17 | 2020-04-22 | 457 | 93d | 0d | BM | 32h |  |
| 484 | 2.6.2.4.4 | Fix issues | 4d | 2020-04-20 | 2020-04-23 | 483FS-3d | 93d |  | BM | 32h |  |
| 485 | 2.6.2.5 | **Final Testing in PROD** | 1443d | 2014-07-01 | 2020-04-10 |  | 102d |  | Codesyntax | 11624h | GA |
| 486 | 2.6.2.5.1 | Review the 100 top landing pages | 1d | 2014-07-01 | 2014-07-01 |  | 1544d |  | Codesyntax | 8h | GA |
| 487 | 2.6.2.5.2 | Execute Test Scenarios in Production | 2d | 2020-04-09 | 2020-04-10 | 456 | 102d |  | EU-OSHA; PwC | 32h | Web Team; JG |
| 488 | 2.6.2.5.3 | Perform Security Tests | 1d | 2020-04-09 | 2020-04-09 | 456 | 103d |  | EU-OSHA; BM | 16h | ICT;GA |
| 489 | 2.6.2.5.4 | Fix broken links | 1d | 2020-04-09 | 2020-04-09 | 456 | 103d |  | EU-OSHA | 8h |  |
| 490 | 2.6.2.5.5 | Review Performance | 2d | 2020-04-09 | 2020-04-10 | 456 | 102d |  | MAINSTRAT | 16h |  |
| 491 | 2.6.3 | **Piwik Configuration** | 4d | 2014-07-01 | 2014-07-04 |  | 1445d | 0d |  | 32h |  |
| 492 | 2.6.3.1 | Revision of Piwik Configuration | 2d | 2014-07-01 | 2014-07-02 |  | 1445d | 0d | Codesyntax | 16h | GA |
| 493 | 2.6.3.2 | Reconfigure Piwik | 2d | 2014-07-03 | 2014-07-04 | 492 | 1445d |  | BM | 16h | GA |

| ID | WBS | Task | Type | Duration | Start | Finish | Predecessors | Total slack | Free slack | Constraint | Resources | Work | Text3 |
| --- | --- | --- | --- | --- | --- | --- | --- | --- | --- | --- | --- | --- | --- |
| 494 | 2.6.4 | **Cut Over** |  | 1451d | 2014-07-07 | 2020-04-28 |  | 0d |  |  |  | 216h |  |
| 495 | 2.6.4.1 | **CutOver Timeframe** |  | 1d | 2014-07-07 | 2014-07-07 |  | 1445d |  |  |  | 8h |  |
| 496 | 2.6.4.1.1 | Specify a window or a timeframe for the CutOver |  | 1d | 2014-07-07 | 2014-07-07 | 491 | 1445d | 0d |  | EU-OSHA | 8h | ICT |
| 497 | 2.6.4.2 | **Go Live** |  | 1450d | 2014-07-08 | 2020-04-28 |  | 0d |  |  |  | 208h |  |
| 498 | 2.6.4.2.1 | DNS preparation |  | 3d | 2020-04-15 | 2020-04-17 | 503FS-10d | 7d |  |  | MAINSTRAT | 24h |  |
| 499 | 2.6.4.2.2 | Redirect DNS to the Drupal Production Environment IP |  | 1d | 2020-04-15 | 2020-04-15 | 503FS-10d | 9d |  |  | BM | 8h | GA |
| 500 | 2.6.4.2.3 | Technical and content testing |  | 5d | 2014-07-08 | 2014-07-14 | 496 | 1445d |  |  | BM; EU-OSHA; PwC | 120h | Web Team; GA;JG |
| 501 | 2.6.4.2.4 | Validation of the Cut Over |  | 2d | 2014-07-08 | 2014-07-09 | 496 | 1448d | 0d |  | BM; EU-OSHA; PwC | 48h | Web Team; GA;JG |
| 502 | 2.6.4.2.5 | Website ready for Go Live | milestone | 0d | 2014-07-09 | 2014-07-09 | 501 | 1448d |  |  | Codesyntax; BM |  | GA |
| 503 | 2.6.4.2.6 | Go Live |  | 1d | 2020-04-28 | 2020-04-28 |  | 0d |  | start no earlier than 2020-04-28 | EU-OSHA | 8h | ICT |
| 504 | 2.6.5 | **POST - Cut Over** |  | 4d | 2020-04-29 | 2020-05-04 |  | 86d |  |  |  | 128h |  |
| 505 | 2.6.5.1 | **Final revision** |  | 4d | 2020-04-29 | 2020-05-04 |  | 86d |  |  |  | 128h |  |
| 506 | 2.6.5.1.1 | Checking post launch |  | 3d | 2020-04-29 | 2020-05-01 | 503 | 87d |  | finish no earlier than 2015-07-24 | EU-OSHA; PwC | 48h | Web Team; JG |
| 507 | 2.6.5.1.2 | Review of Broken Links, missing redirects |  | 1d | 2020-04-29 | 2020-04-29 | 503 | 86d | 0d | finish no earlier than 2015-07-24 | EU-OSHA | 8h | Web Team |
| 508 | 2.6.5.1.3 | Verify SEO |  | 3d | 2020-04-29 | 2020-05-01 | 503 | 87d |  |  | Codesyntax; BM | 48h | GA |
| 509 | 2.6.5.1.4 | Urgent fixing needed |  | 3d | 2020-04-30 | 2020-05-04 | 507 | 86d |  |  | BM | 24h | GA |
| 510 | 2.6.6 | **Management support** |  | 90d | 2020-04-29 | 2020-09-01 |  | 0d |  |  |  | 5760h |  |
| 511 | 2.6.6.1 | **Follow up status reports** |  | 90d | 2020-04-29 | 2020-09-01 |  | 0d |  |  |  | 3600h |  |
| 512 | 2.6.6.1.1 | Sending the fortnightly or weekly status reports |  | 90d | 2020-04-29 | 2020-09-01 | 497 | 0d |  | start no earlier than 2016-11-02 | BM; LB; MAINSTRAT; SYSLAB | 2880h |  |
| 513 | 2.6.6.1.2 | Consolidation of fortnightly or weekly reports |  | 90d | 2020-04-29 | 2020-09-01 | 497 | 0d |  | start no earlier than 2016-11-02 | PwC | 720h |  |
| 514 | 2.6.6.2 | Coordination of contractors: shared planning and basis of their relationship |  | 90d | 2020-04-29 | 2020-09-01 | 497 | 0d |  | start no earlier than 2016-02-01 | PwC | 720h |  |
| 515 | 2.6.6.3 | Follow up of the scope and planning |  | 90d | 2020-04-29 | 2020-09-01 | 497 | 0d |  | start no earlier than 2016-02-01 | PwC | 720h |  |
| 516 | 2.6.6.4 | Assistance in the compliance of common methodology framework |  | 90d | 2020-04-29 | 2020-09-01 | 497 | 0d |  | start no earlier than 2016-02-01 | PwC | 720h |  |
